# Project Plan Template

How a schedule from MS Project XML changed from version to version. A marks actual dates.

## Version 1 (data date 2025-05-09, saved 2026-08-28, file boiler-roundtrip-project-saved-task43.xml)

Note of the change: feat: commit the round-trip proof pair for the assigned-task completion export

| ID | WBS | Task | Duration | Start | Finish | Predecessors | Complete | Total float |
| --- | --- | --- | --- | --- | --- | --- | --- | --- |
| 1 | 1 | **Pre-Work** | 16d | 2026-08-17 07:00 A | 2026-09-12 10:30 |  | 2% | 7.2d |
| 2 | 1.1 | **Scaffold** | 14.2d | 2026-08-17 07:30 A | 2026-09-09 13:30 |  | 6% | 9d |
| 3 |  | Conduct all pre-work scaffold lifts | 8h | 2026-08-17 07:30 A | 2026-08-17 15:30 A | 68FS-28ed | 100% |  |
| 4 |  | Scaffold access to Feedwater flow element (1.3) | 4h | 2026-08-18 07:30 | 2026-08-18 11:30 | 3 |  | 7.2d |
| 5 |  | Scaffold access to Feedwater isolating valve and NRV, 4-way pipe support (1.4 & 1.5) | 8h | 2026-08-18 11:30 | 2026-08-19 11:30 | 4 |  | 7.2d |
| 6 |  | Scaffold access to Steam drum & Steam drum safety valves (2.1 & 2.3.6-10) | 12h | 2026-08-19 11:30 | 2026-08-20 15:30 | 5 |  | 7.2d |
| 7 |  | Scaffold access to Attemperator inspection ports (3.2.4) | 6h | 2026-08-21 07:30 | 2026-08-21 13:30 | 6 |  | 7.2d |
| 8 |  | Scaffold access to Attemperator Externals (3.3) | 8h | 2026-08-21 13:30 | 2026-08-24 13:30 | 7 |  | 7.2d |
| 9 |  | Scaffold access to secondary superheater outlet header (5.1.1-2) | 8h | 2026-08-24 13:30 | 2026-08-25 13:30 | 8 |  | 7.2d |
| 10 |  | Scaffold access to Furnace door #4 (8.1.2) | 2h | 2026-08-25 13:30 | 2026-08-25 15:30 | 9 |  | 7.2d |
| 11 |  | Scaffold barricade & ladder access to Economsier & RAH (9.1.3 & 13.1.6) | 2h | 2026-08-26 07:30 | 2026-08-26 09:30 | 10 |  | 7.2d |
| 12 |  | Scaffold access to HS piping (10.1.6 & 10.2.7-8) | 16h | 2026-08-26 09:30 | 2026-08-28 09:30 | 11 |  | 7.2d |
| 13 |  | Scaffold to access Flash tank & Flash tank safety valve (11.1.2 & 11.2.6) | 6h | 2026-08-28 09:30 | 2026-08-28 15:30 | 12 |  | 7.2d |
| 14 |  | Scaffold access to FD fan door #3 (12.1.2) | 1h | 2026-08-31 07:30 | 2026-08-31 08:30 | 13 |  | 7.2d |
| 15 |  | Scaffold access to FD fan outlet ducting door #14 & #15 (12.1.3) | 4h | 2026-08-31 08:30 | 2026-08-31 12:30 | 14 |  | 7.2d |
| 16 |  | Scaffold access to FD fan expansion joint (12.2.7) | 4h | 2026-08-31 12:30 | 2026-09-01 08:30 | 15 |  | 7.2d |
| 17 |  | Scaffold access to Rotary air heater door #2 (13.1.4) | 1h | 2026-09-01 08:30 | 2026-09-01 09:30 | 16 |  | 7.2d |
| 18 |  | Scaffold handrail at Rotary air heater door #5 (13.1.7) | 1h | 2026-09-01 09:30 | 2026-09-01 10:30 | 17 |  | 7.2d |
| 19 |  | Scaffold access to Rotary air heater hot & cold end bearings (13.1.8-9) | 6h | 2026-09-01 10:30 | 2026-09-02 08:30 | 18 |  | 7.2d |
| 20 |  | Scaffold to access Rotary air heater for installation of anti-rotation device (13.3.7) | 4h | 2026-09-02 08:30 | 2026-09-02 12:30 | 19 |  | 7.2d |
| 21 |  | Scaffold to access Rotary air heater expansion joints x3 (13.4.4) | 8h | 2026-09-02 12:30 | 2026-09-03 12:30 | 20 |  | 7.2d |
| 22 |  | Scaffold access to Windbox door #1 (14.1.4) | 1h | 2026-09-03 12:30 | 2026-09-03 13:30 | 21 |  | 7.2d |
| 23 |  | Scaffold access to Continuous blowdown valve and enclosure rear wall drain lines (15.2.1) | 6h | 2026-09-03 13:30 | 2026-09-04 11:30 | 22 |  | 7.2d |
| 24 |  | Scaffold access to Final drains (15.2.2) | 6h | 2026-09-04 11:30 | 2026-09-07 09:30 | 23 |  | 7.2d |
| 25 |  | Scaffold access to HS drains (15.2.3) | 6h | 2026-09-07 09:30 | 2026-09-07 15:30 | 24 |  | 7.2d |
| 26 |  | Erect 1m mobile scaffold for misc drains access (15.3.1) | 2h | 2026-09-08 07:30 | 2026-09-08 09:30 | 25 |  | 9.2d |
| 27 |  | Scaffold access to Continuous blowdown & downcomer base plate (15.3.2 & 16.1.2) | 2h | 2026-09-08 09:30 | 2026-09-08 11:30 | 26 |  | 9.2d |
| 28 |  | Scaffold access to Attemperator return line 4-way pipe support (16.1.1) | 4h | 2026-09-08 11:30 | 2026-09-08 15:30 | 27 |  | 9.2d |
| 29 |  | Erect 1m mobile scaffold to access top of MCC panel (18.1) | 2h | 2026-09-09 07:30 | 2026-09-09 09:30 | 28 |  | 9.2d |
| 30 |  | Scaffold access to HS header vertical elbow (19.1.4) | 2h | 2026-09-09 09:30 | 2026-09-09 11:30 | 29 |  | 9.2d |
| 31 |  | Erect scaffold below steam drum safety valve platform prior to grid mesh removal | 2h | 2026-09-09 11:30 | 2026-09-09 13:30 | 30 |  | 9d |
| 32 |  | Pre-Work Scaffold Complete | 0h | 2026-09-09 13:30 | 2026-09-09 13:30 | 31 |  | 9d |
| 33 | 1.2 | **Online Lagging Removal** | 12d | 2026-08-24 07:30 | 2026-09-11 15:30 |  |  | 7.2d |
| 34 |  | Strip lagging on Feedwater station piping and valves (1.2.2) | 12h | 2026-08-24 07:30 | 2026-08-25 11:30 | 68FS-21ed |  | 9.8d |
| 35 |  | Strip lagging on Feedwater flow element nozzles (1.3.3) | 4h | 2026-08-25 11:30 | 2026-08-25 15:30 | 4, 34 |  | 9.8d |
| 36 |  | Strip lagging on Feedwater isolating valve and NRV (1.4.3) | 6h | 2026-08-26 07:30 | 2026-08-26 13:30 | 5, 35 |  | 9.8d |
| 37 |  | Strip lagging on Feedwater 4-way sliding support (1.5.3) | 4h | 2026-08-26 13:30 | 2026-08-27 09:30 | 36 |  | 9.8d |
| 38 |  | Strip lagging on Steam drum doors (2.1.6-7) | 4h | 2026-08-27 09:30 | 2026-08-27 13:30 | 6, 37 |  | 9.8d |
| 39 |  | Strip lagging on Flash tank (11.2) | 20h | 2026-08-31 07:30 | 2026-09-02 11:30 | 13, 38 |  | 8.8d |
| 40 |  | Strip lagging on Blowdown vessel (11.3.1) | 4h | 2026-09-02 11:30 | 2026-09-02 15:30 | 39 |  | 8.8d |
| 41 |  | Strip lagging on FD fan and ducting (12.1.6) | 8h | 2026-09-03 07:30 | 2026-09-03 15:30 | 16, 40 |  | 8.8d |
| 42 |  | Strip lagging on above ground level drains and blowdown systems (15.2.2-8) | 16h | 2026-09-08 07:30 | 2026-09-09 15:30 | 25, 41 |  | 7.2d |
| 43 |  | Strip lagging on ground level drains and blowdown system (15.3.3-5) | 12h | 2026-09-10 07:30 | 2026-09-11 11:30 | 42 |  | 7.2d |
| 44 |  | Strip lagging on Downcomer base plate (16.1.4) | 4h | 2026-09-11 11:30 | 2026-09-11 15:30 | 43 |  | 7.2d |
| 45 |  | Online Lagging Removal Complete | 0h | 2026-09-11 15:30 | 2026-09-11 15:30 | 44, 35, 37, 38, 41, 40 |  | 7.2d |
| 46 | 1.3 | **Shutdown TA1** | 1.6d | 2026-09-07 20:00 | 2026-09-09 16:00 |  |  | 8.8d |
| 47 |  | Shutdown TA1 in preperation for Boiler 1 MOH | 40h | 2026-09-07 20:00 | 2026-09-09 12:00 | 68FS-6ed |  | 8.8d |
| 48 |  | Raise TA1 HV permit | 4h | 2026-09-09 12:00 | 2026-09-09 16:00 | 47 |  | 8.8d |
| 49 | 1.4 | **Starter Maintenance - Pre-work** | 0d | 2026-09-12 07:00 | 2026-09-12 10:30 |  |  | 7d |
| 50 |  | PDMAIN34 - LV STARTER (POWERHOUSE) MAINTENANCE - STARTER-WG110-ICF101 | 0.5h | 2026-09-12 07:00 | 2026-09-12 07:30 | 68FS-2ed |  | 7d |
| 51 |  | PDMAIN34 - LV STARTER (POWERHOUSE) MAINTENANCE - STARTER-WG110-ICF102 | 0.5h | 2026-09-12 07:30 | 2026-09-12 08:00 | 50 |  | 7.05d |
| 52 |  | PDMAIN34 - LV STARTER (POWERHOUSE) MAINTENANCE - STARTER-WG110-101BD05 | 0.5h | 2026-09-12 08:00 | 2026-09-12 08:30 | 51 |  | 7.1d |
| 53 |  | PDMAIN34 - LV STARTER (POWERHOUSE) MAINTENANCE - STARTER-WG110-SAS202 | 0.5h | 2026-09-12 08:30 | 2026-09-12 09:00 | 52 |  | 7.15d |
| 54 |  | PDMAIN34 - LV STARTER (POWERHOUSE) MAINTENANCE - STARTER-WG110-101SH10 | 0.5h | 2026-09-12 09:00 | 2026-09-12 09:30 | 53 |  | 7.2d |
| 55 |  | PDMAIN34 - LV STARTER (POWERHOUSE) MAINTENANCE - STARTER-WG110-101LEV04 | 0.5h | 2026-09-12 09:30 | 2026-09-12 10:00 | 54 |  | 7.2d |
| 56 |  | PDMAIN34 - LV STARTER (POWERHOUSE) MAINTENANCE - STARTER-WG110-101LEV05 | 0.5h | 2026-09-12 10:00 | 2026-09-12 10:30 | 55 |  | 7.2d |
| 57 |  | 80T Crane to assist with pre-work scaffold lifts | 48h | 2026-08-17 07:00 | 2026-08-21 15:00 | 68FS-28ed |  | 19.25d |
| 58 |  | Cleanaway to deliver 1x general waste & 1x Lagging bin | 1h | 2026-09-07 07:30 | 2026-09-07 08:30 | 68FS-7ed |  | 11.1d |
| 59 |  | Remove gridmesh to allow steam drum safety valve removal | 3h | 2026-08-20 15:30 | 2026-08-21 08:30 | 6 |  | 19.85d |
| 60 |  | Remove RAH gridmesh to allow access for installation of anit-rotation device | 3h | 2026-09-02 12:30 | 2026-09-02 15:30 | 20 |  | 12.8d |
| 61 |  | Pre-work Complete | 0h | 2026-09-12 10:30 | 2026-09-12 10:30 | 32, 45, 57, 58, 59, 60, 48, 56 |  | 7.2d |
| 62 | 2 | **Boiler Offline** | 26.6d | 2026-09-13 19:00 | 2026-09-24 21:00 |  |  | 0d |
| 63 | 2.1 | **Shutdown & Isolations** | 6.4d | 2026-09-13 19:00 | 2026-09-23 17:00 |  |  | 0d |
| 64 | 2.1.1 | **ADMIN ONLY** | 6.4d | 2026-09-13 19:00 | 2026-09-23 17:00 |  |  | 0.8d |
| 65 |  | ADMIN ONLY - PARTS OPERATION - BOILER 1 MAJOR OVERHAUL | 1h | 2026-09-13 19:00 | 2026-09-13 20:00 |  |  | 7.2d |
| 66 |  | 100T crane for boiler 1 major overhaul | 100h | 2026-09-14 07:00 | 2026-09-23 17:00 |  |  | 0.8d |
| 67 | 2.1.2 | **Shutdown Boiler** | 0.55d | 2026-09-13 19:00 | 2026-09-14 13:00 |  |  | 0d |
| 68 |  | Shutdown Boiler | 1h | 2026-09-13 19:00 | 2026-09-13 20:00 |  |  | 1.6d |
| 69 |  | Boiler Cooldown - Observe pressure drops and temps. Do not exceed 2° per min - AUACDS-21393 | 18h | 2026-09-13 19:00 | 2026-09-14 13:00 |  |  | 0d |
| 70 |  | Run FD fan to assist with cooldown | 14h | 2026-09-13 19:00 | 2026-09-14 09:00 |  |  | 1.6d |

| ID | WBS | Task | Duration | Start | Finish | Predecessors | Total float |
| --- | --- | --- | --- | --- | --- | --- | --- |
| 71 | 2.1.3 | **Electrical Isolations** | 0.35d | 2026-09-13 20:00 | 2026-09-14 11:00 |  | 2.05d |
| 72 |  | Confirm zero energy on the Main Steam Stop, Main Steam Stop Bypass, and HS Header Rotorks - Shift EI | 2h | 2026-09-13 20:00 | 2026-09-13 22:00 | 68 | 8.25d |
| 73 |  | Rack out FD fan | 1h | 2026-09-14 09:00 | 2026-09-14 10:00 | 70 | 1.9d |
| 74 |  | Isolate 415v MCC board | 2h | 2026-09-14 07:00 | 2026-09-14 09:00 | 68 | 2.25d |
| 75 |  | Isolate oxygen analyser power supplies | 0.5h | 2026-09-14 09:00 | 2026-09-14 09:30 | 74 | 2.2d |
| 76 |  | Isolate & disconnect Igniters for CSE | 1h | 2026-09-14 09:30 | 2026-09-14 10:30 | 75 | 2.15d |
| 77 |  | Isolate attemperator power supply | 0.5h | 2026-09-14 10:30 | 2026-09-14 11:00 | 76 | 2.15d |
| 78 |  | Electrical Isolations Complete | 0h | 2026-09-14 11:00 | 2026-09-14 11:00 | 72, 77, 74 | 2.15d |
| 79 | 2.1.4 | **Gas Purge, Pressure Test & Isolation** | 0.65d | 2026-09-13 20:00 | 2026-09-14 14:00 |  | 1.6d |
| 80 |  | Isolate & tag for gas purge & pressure test | 4h | 2026-09-13 20:00 | 2026-09-14 00:00 | 68 | 1.6d |
| 81 |  | Connect nitrogen & set up for purge and pressure test | 1h | 2026-09-14 07:00 | 2026-09-14 08:00 | 80 | 1.85d |
| 82 |  | Purge natural gas system - Thermal Systems | 1h | 2026-09-14 08:00 | 2026-09-14 09:00 | 81 | 1.9d |
| 83 |  | Purge LPG gas system - Thermal Systems | 1h | 2026-09-14 09:00 | 2026-09-14 10:00 | 82 | 1.9d |
| 84 |  | Conduct gas system pressure test - Thermal Systems | 2h | 2026-09-14 07:00 | 2026-09-14 09:00 | 80 | 1.95d |
| 85 |  | Assist with purge and pressure test | 2h | 2026-09-14 08:00 | 2026-09-14 10:00 | 81 | 1.9d |
| 86 |  | Amend gas system isolation & tag for blank swing | 1h | 2026-09-14 10:00 | 2026-09-14 11:00 | 83, 84, 85, 73 | 1.9d |
| 87 |  | Swing Main and Pilot Gas System Blanks | 0.5h | 2026-09-14 11:00 | 2026-09-14 11:30 | 86 | 2d |
| 88 |  | Disconnect LPG gas hoses | 1h | 2026-09-14 11:30 | 2026-09-14 12:30 | 87 | 1.9d |
| 89 |  | Remove burner 1 gas spool and blank for CSE | 0.5h | 2026-09-14 11:00 | 2026-09-14 11:30 | 86 | 1.9d |
| 90 |  | Remove burner 2 gas spool and blank for CSE | 0.5h | 2026-09-14 11:30 | 2026-09-14 12:00 | 89 | 1.9d |
| 91 |  | Remove burner 3 gas spool and blank for CSE | 0.5h | 2026-09-14 12:00 | 2026-09-14 12:30 | 90 | 1.9d |
| 92 |  | Remove burner 4 gas spool and blank for CSE | 0.5h | 2026-09-14 12:30 | 2026-09-14 13:00 | 91 | 1.85d |
| 93 |  | Remove burner 5 gas spool and blank for CSE | 0.5h | 2026-09-14 13:00 | 2026-09-14 13:30 | 92 | 1.8d |
| 94 |  | Remove burner 6 gas spool and blank for CSE | 0.5h | 2026-09-14 13:30 | 2026-09-14 14:00 | 93 | 1.75d |
| 95 |  | Gas Purge, Pressure & Isolations Test Complete | 0h | 2026-09-14 14:00 | 2026-09-14 14:00 | 88, 94 | 1.75d |
| 96 | 2.1.5 | **Boiler Isolations & Hydrostatic Leak Test** | 0.55d | 2026-09-14 10:00 | 2026-09-15 02:30 |  | 1.9d |
| 97 |  | Isolate & tag boiler for hydro leak test | 2h | 2026-09-14 10:00 | 2026-09-14 12:00 | 80, 73 | 1.95d |
| 98 |  | Open & barricade air path doors for hydro leak test | 2h | 2026-09-14 12:00 | 2026-09-14 14:00 | 70, 97 | 1.75d |
| 99 |  | Open & barricade gas path doors for hydro leak test | 2h | 2026-09-14 12:00 | 2026-09-14 14:00 | 70, 97 | 1.75d |
| 100 |  | Open & barricade remaining air & gas path doors | 4h | 2026-09-14 14:00 | 2026-09-14 18:00 | 98, 99 | 1.7d |
| 101 |  | Civmec Remove door refractory wickets | 2h | 2026-09-14 12:00 | 2026-09-14 14:00 | 70, 97 | 1.85d |
| 102 |  | Insert FD fan rotation prevention tube | 1h | 2026-09-14 12:00 | 2026-09-14 13:00 | 70, 97 | 1.85d |
| 103 |  | Complete isolation & raise CSE for boiler hydro leak test | 1h | 2026-09-14 14:00 | 2026-09-14 15:00 | 98, 99, 102, 69, 95 | 1.65d |
| 104 |  | Conduct boiler hydro leak test | 2h | 2026-09-14 15:00 | 2026-09-14 17:00 | 103 | 1.6d |
| 105 |  | Engineer to witness the hydro leak test | 2h | 2026-09-14 15:00 | 2026-09-14 17:00 | 103 | 5.95d |
| 106 |  | Sentry to assist with boiler hydro leak test inspection | 2h | 2026-09-14 15:00 | 2026-09-14 17:00 | 103 | 1.6d |
| 107 |  | Drain boiler after hydro leak test and isolate | 4h | 2026-09-14 17:00 | 2026-09-14 21:00 | 105, 104, 106 | 1.6d |
| 108 |  | Conduct attemperator leak test | 2h | 2026-09-14 21:00 | 2026-09-14 23:00 | 107 | 1.6d |
| 109 |  | Amend air & gas path CSE after hydro leak test | 2h | 2026-09-14 21:00 | 2026-09-14 23:00 | 108, 100, 101, 78 | 1.7d |
| 110 |  | Isolate & tag to open water side doors | 0.5h | 2026-09-14 21:00 | 2026-09-14 21:30 | 108 | 1.6d |
| 111 |  | Open & barricade steam drum doors | 1h | 2026-09-14 21:30 | 2026-09-14 22:30 | 110 | 1.6d |
| 112 |  | Open & barricade flash tank door | 1h | 2026-09-14 22:30 | 2026-09-14 23:30 | 111 | 1.6d |
| 113 |  | Open & barricade IBO door | 1h | 2026-09-14 23:30 | 2026-09-15 00:30 | 112 | 1.6d |
| 114 |  | Raise CSE's for statutory inspections | 2h | 2026-09-15 00:30 | 2026-09-15 02:30 | 113 | 1.7d |
| 115 |  | Boiler Isolations & Leak Test Complete | 0h | 2026-09-15 02:30 | 2026-09-15 02:30 | 114, 109 | 1.9d |
| 116 | 2.2 | **Maintenance** | 5.6d | 2026-09-13 19:00 | 2026-09-23 02:00 |  | 0.8d |
| 117 | 2.2.1 | **Feedwater System (1)** | 2.75d | 2026-09-13 19:00 | 2026-09-17 11:00 |  | 2.95d |
| 118 |  | Perform fused alumina blasting of all exposed welds – as per scope 1.2, 1.3, and 1.4 | 3h | 2026-09-13 20:00 | 2026-09-13 23:00 | 68 | 4d |
| 119 |  | Perform NDT of feedwater system – as per scope 1.2, 1.3, and 1.4 | 8h | 2026-09-14 07:00 | 2026-09-14 15:00 | 118 | 4.85d |
| 120 |  | Inspect and record cold position of feedwater system hangers | 1.5h | 2026-09-14 15:00 | 2026-09-14 16:30 | 119 | 4.85d |
| 121 | 2.2.1.4 | **Feedwater Control Valves** | 2.75d | 2026-09-14 07:00 | 2026-09-17 11:00 |  | 2.95d |
| 122 |  | Disconnect 2x feedwater fisher control valves | 2h | 2026-09-14 07:00 | 2026-09-14 09:00 |  | 3.85d |
| 123 |  | Strip & overhaul 2x feedwater fisher control valves | 30h | 2026-09-14 09:00 | 2026-09-17 09:00 | 122 | 3.05d |
| 124 |  | Reconnect 2x feedwater fisher control valves | 2h | 2026-09-17 09:00 | 2026-09-17 11:00 | 123 | 2.95d |
| 125 | 2.2.1.5 | **Adhoc Maintenance** | 0.55d | 2026-09-13 19:00 | 2026-09-14 13:00 |  | 5.1d |
| 126 | 2.2.1.5.1 | **WESTARC - Replace passing LEV04 drain valve** | 0.55d | 2026-09-13 19:00 | 2026-09-14 13:00 |  | 5.1d |
| 127 |  | Tag for replacement of passing LEV04 drain valve | 1h | 2026-09-13 19:00 | 2026-09-13 20:00 |  | 5.1d |
| 128 |  | WESTARC - Replace passing LEV04 drain valve | 4h | 2026-09-14 07:00 | 2026-09-14 11:00 | 127 | 5.2d |
| 129 |  | NDT/MPI after replacement of LEV04 drain valve | 2h | 2026-09-14 11:00 | 2026-09-14 13:00 | 128 | 5.15d |
| 130 |  | Feewater Control Valve Maintenance Complete | 0h | 2026-09-17 11:00 | 2026-09-17 11:00 | 124, 120, 129 | 2.95d |
| 131 | 2.2.2 | **Steam Drum (2)** | 4d | 2026-09-14 07:00 | 2026-09-20 08:00 |  | 1.6d |
| 132 | 2.2.2.1 | **Steam Drum Internal 2.2** | 1.6d | 2026-09-15 02:30 | 2026-09-16 16:00 |  | 4d |
| 133 |  | LPW steam drum pending visual inspection | 8h | 2026-09-15 02:30 | 2026-09-15 11:00 | 115 | 4.15d |
| 134 |  | Remove approximately 100–200 L of remaining water from drum (both ends) | 4h | 2026-09-15 11:00 | 2026-09-15 15:00 | 133 | 4.05d |
| 135 |  | Power wire brush all accessible internal welds selected for NDT (Steam Drum) - as per scope 2.2 | 6h | 2026-09-15 15:00 | 2026-09-15 21:00 | 134 | 4.05d |
| 136 |  | Perform NDT of steam drum internals – as per scope 2.2 | 4h | 2026-09-16 07:00 | 2026-09-16 11:00 | 135 | 4.05d |
| 137 |  | Conduct internal visual inspection of steam drum – as per scope 2.2 | 3h | 2026-09-16 11:00 | 2026-09-16 14:00 | 136 | 4.1d |
| 138 |  | Close steam drum doors #12 (South) and #13 (North) and replace door gaskets | 2h | 2026-09-16 14:00 | 2026-09-16 16:00 | 137 | 4d |
| 139 | 2.2.2.2 | **Steam Drum External 2.3** | 2.4d | 2026-09-15 16:00 | 2026-09-20 08:00 |  | 0d |
| 140 |  | Strip lagging from steam drum for external inspection – as per scope 2.3 | 24h | 2026-09-15 16:00 | 2026-09-16 16:00 | 337 | 0d |

| ID | WBS | Task | Duration | Start | Finish | Predecessors | Total float |
| --- | --- | --- | --- | --- | --- | --- | --- |
| 141 |  | Perform dry fused alumina blasting of all exposed welds (Steam Drum) | 4h | 2026-09-18 23:00 | 2026-09-19 03:00 | 140, 170 | 0.8d |
| 142 |  | Vacuum blasting debris (Steam Drum) | 4h | 2026-09-19 03:00 | 2026-09-19 09:00 | 141 | 1.6d |
| 143 |  | Perform NDT of steam drum externals – as per scope 2.3 | 6h | 2026-09-19 09:00 | 2026-09-19 15:00 | 142 | 1.65d |
| 144 |  | Conduct external visual inspection of steam drum – as per scope 2.3 | 3h | 2026-09-19 15:00 | 2026-09-20 08:00 | 143, 146 | 2.25d |
| 145 | 2.2.2.3 | **Steam Drum Safety Valves** | 0.45d | 2026-09-15 07:00 | 2026-09-15 12:00 |  | 4.5d |
| 146 |  | Changeout steam drum west safety valves with certified spares | 2h | 2026-09-15 07:00 | 2026-09-15 09:00 | 115 | 4.5d |
| 147 |  | Changeout steam drum east safety valves with certified spares | 2h | 2026-09-15 07:00 | 2026-09-15 09:00 | 115 | 5.45d |
| 148 |  | 60T Crane required to assist with safety valve removal | 5h | 2026-09-15 07:00 | 2026-09-15 12:00 | 115 | 5.15d |
| 149 |  | Steam Drum Safety Valve Maintenace Complete | 0h | 2026-09-15 12:00 | 2026-09-15 12:00 | 146, 148, 147 | 5.15d |
| 150 |  | Inspect steam drum magnatrol | 1h | 2026-09-14 07:00 | 2026-09-14 08:00 |  | 6.35d |
| 151 |  | Inspect steam drum aquarian | 1h | 2026-09-14 08:00 | 2026-09-14 09:00 | 150 | 6.25d |
| 152 |  | Steam Drum Complete | 0h | 2026-09-20 08:00 | 2026-09-20 08:00 | 144, 138, 149, 151 | 2.4d |
| 153 | 2.2.3 | **Attemperator (3)** | 4.8d | 2026-09-14 07:00 | 2026-09-22 07:30 |  | 0.9d |
| 154 |  | Strip lagging from attemperator door #19 | 4h | 2026-09-16 13:00 | 2026-09-16 17:00 | 276 | 0d |
| 155 | 2.2.3.2 | **Attemperator Internal - (3.2)** | 1.6d | 2026-09-16 17:00 | 2026-09-19 12:30 |  | 1.3d |
| 156 |  | Open attemperator vessel door #19 | 1h | 2026-09-17 07:00 | 2026-09-17 08:00 | 154 | 1.55d |
| 157 |  | Raise CSE - Attemperator door #19 | 1h | 2026-09-17 08:00 | 2026-09-17 09:00 | 156 | 1.45d |
| 158 |  | Remove insulation from attemperator inspection nozzles I5 and I6, fully exposing end caps | 4h | 2026-09-16 17:00 | 2026-09-16 21:00 | 154 | 1.6d |
| 159 |  | Cut inspection caps from attemperator inspection ports I5 (North) and I6 (South) in preparation for borescope inspection | 4h | 2026-09-17 07:00 | 2026-09-17 11:00 | 158 | 1.25d |
| 160 |  | Power wire buff of attemperator steam inlet and outlet piping welds to nozzles | 4h | 2026-09-17 11:00 | 2026-09-17 15:00 | 157, 159 | 0.85d |
| 161 |  | Perform NDT of steam inlet and outlet piping nozzle welds – as per scope 3.2 | 4h | 2026-09-17 15:00 | 2026-09-18 10:00 | 160 | 0.8d |
| 162 |  | Conduct internal visual inspection via door #16 – as per scope 3.2 | 1.5h | 2026-09-18 10:00 | 2026-09-18 11:30 | 161 | 0.8d |
| 163 |  | Install new attemperator inspection caps at nozzles I5 and I6 following inspection | 6h | 2026-09-18 11:30 | 2026-09-19 07:30 | 162 | 0.8d |
| 164 |  | Perform NDT of inspection nozzle I5 and I6 welds after reinstatement – as per scope 3.2 | 2h | 2026-09-19 07:30 | 2026-09-19 09:30 | 163 | 0.8d |
| 165 |  | Remove CSE - Attemperator door #19 | 1h | 2026-09-19 09:30 | 2026-09-19 10:30 | 164 | 1d |
| 166 |  | Close attemperator vessel door #19 | 2h | 2026-09-19 10:30 | 2026-09-19 12:30 | 165 | 1.1d |
| 167 |  | Attemperator Internal Complete | 0h | 2026-09-19 12:30 | 2026-09-19 12:30 | 166 | 1.3d |
| 168 | 2.2.3.3 | **Attemperator External - (3.3)** | 2d | 2026-09-16 17:00 | 2026-09-21 11:30 |  | 0.9d |
| 169 |  | Remove insulation to expose welds for NDT – as per scope 3.3 (Attemperator) | 20h | 2026-09-16 17:00 | 2026-09-17 13:00 | 154 | 1.05d |
| 170 |  | Perform dry fused alumina blasting of all exposed welds – as per scope 3.3 (attemperator) | 5h | 2026-09-18 18:00 | 2026-09-18 23:00 | 169, 225 | 0d |
| 171 |  | Vacuum blasting debris (Attemperator) | 8h | 2026-09-18 23:00 | 2026-09-19 11:00 | 170 | 0.05d |
| 172 |  | Perform NDT of attemperator externals – as per scope 3.3 | 8h | 2026-09-19 11:00 | 2026-09-21 10:00 | 171 | 0.45d |
| 173 |  | Conduct external visual inspection of attemperator – as per scope 3.3 | 1.5h | 2026-09-21 10:00 | 2026-09-21 11:30 | 172 | 0.9d |
| 174 |  | Attemperator External Complete | 0h | 2026-09-21 11:30 | 2026-09-21 11:30 | 173 | 0.9d |
| 175 | 2.2.3.4 | **Attemperator Control Valves** | 1.95d | 2026-09-14 07:00 | 2026-09-16 11:00 |  | 3.75d |
| 176 |  | Remove attemperator control valves and take to workshop for overhaul | 4h | 2026-09-14 07:00 | 2026-09-14 11:00 |  | 3.75d |
| 177 |  | Crane required to remove attemperator control valves | 4h | 2026-09-14 11:00 | 2026-09-14 15:00 | 176 | 3.75d |
| 178 |  | Overhaul attemperator control valves & replace linkages | 8h | 2026-09-14 15:00 | 2026-09-15 13:00 | 177 | 3.75d |
| 179 |  | Refit attemperator control valves after overhaul | 4h | 2026-09-15 13:00 | 2026-09-15 17:00 | 178 | 3.75d |
| 180 |  | Crane required to install attemperator control valves | 4h | 2026-09-16 07:00 | 2026-09-16 11:00 | 179 | 3.75d |
| 181 |  | Attemperator Control Valve Maintenance Complete | 0h | 2026-09-16 11:00 | 2026-09-16 11:00 | 180 | 3.75d |
| 182 |  | Reinstate all attemperator lagging | 20h | 2026-09-21 11:30 | 2026-09-22 07:30 | 167, 174, 518 | 0.9d |
| 183 |  | Attemperator Maintenance Complete | 0h | 2026-09-22 07:30 | 2026-09-22 07:30 | 182, 181 | 0.9d |
| 184 | 2.2.4 | **Penthouse (4)** | 2.15d | 2026-09-15 02:30 | 2026-09-17 13:00 |  | 2.75d |
| 185 | 2.2.4.1 | **Secondary Superheater Inlet Header (4.2)** | 1.6d | 2026-09-15 02:30 | 2026-09-16 16:36 |  | 3.2d |
| 186 |  | Erect access scaffold inside door #11 | 4h | 2026-09-15 02:30 | 2026-09-15 06:30 | 356, 115 | 3.2d |
| 187 |  | Perform dry fused alumina blasting of tube to header welds and structural header support welds - As per scope 4.2 (SSIH) | 4h | 2026-09-15 23:00 | 2026-09-16 03:00 | 186, 444 | 2.4d |
| 188 |  | Vacuum blasting debris (SSIH) | 8h | 2026-09-16 03:00 | 2026-09-16 11:00 | 187 | 2.8d |
| 189 |  | Perform NDT of secondary superheater inlet header - as per scope 4.2 | 4h | 2026-09-16 11:00 | 2026-09-16 15:00 | 188 | 2.75d |
| 190 |  | Conduct visual inspection of secondary superheater inlet header | 1.6h | 2026-09-16 15:00 | 2026-09-16 16:36 | 189 | 2.75d |
| 191 |  | Secondary Superheater Inlet Header Complete | 0h | 2026-09-16 16:36 | 2026-09-16 16:36 | 190 | 3.3d |
| 192 | 2.2.4.2 | **Economiser Riser Headers (4.3)** | 0.07d | 2026-09-16 16:36 | 2026-09-17 08:12 |  | 2.86d |
| 193 |  | Conduct visual inspection of economiser riser headers | 1.6h | 2026-09-16 16:36 | 2026-09-17 08:12 | 190 | 2.86d |
| 194 |  | Economiser Riser Headers Complete | 0h | 2026-09-17 08:12 | 2026-09-17 08:12 | 193 | 3.23d |
| 195 | 2.2.4.3 | **Upper Waterwall Header (4.4)** | 0.16d | 2026-09-17 08:12 | 2026-09-17 09:48 |  | 2.95d |
| 196 |  | Conduct visual inspection of upper waterwall header - as per scope 4.4 | 1.6h | 2026-09-17 08:12 | 2026-09-17 09:48 | 193 | 2.95d |
| 197 |  | Upper Waterwall Header Complete | 0h | 2026-09-17 09:48 | 2026-09-17 09:48 | 196 | 3.07d |
| 198 | 2.2.4.4 | **Saturated Steam Tubes (4.5)** | 0.16d | 2026-09-17 09:48 | 2026-09-17 11:24 |  | 2.91d |
| 199 |  | Conduct visual inspection of saturated steam tubes - as per scope 4.5 | 1.6h | 2026-09-17 09:48 | 2026-09-17 11:24 | 196 | 2.81d |
| 200 |  | Saturated Steam Tubes Complete | 0h | 2026-09-17 11:24 | 2026-09-17 11:24 | 199 | 2.91d |
| 201 | 2.2.4.5 | **Drum and Drum Connections (4.6)** | 1.35d | 2026-09-16 03:00 | 2026-09-17 13:00 |  | 2.75d |
| 202 |  | Perform dry fused alumina blasting of drum and drum connections - As per scope 4.6 | 3h | 2026-09-16 03:00 | 2026-09-16 06:00 | 187 | 3.2d |
| 203 |  | Vacuum blasting debris (drum and drum connections) | 2h | 2026-09-16 11:00 | 2026-09-16 13:00 | 202, 188 | 3.1d |
| 204 |  | Perform NDT of drum and drum connections - as per scope 4.6 | 4h | 2026-09-16 15:00 | 2026-09-17 10:00 | 203, 189 | 2.9d |
| 205 |  | Conduct visual inspection of drum and drum connections - as per scope 4.6 | 1.6h | 2026-09-17 11:24 | 2026-09-17 13:00 | 204, 199 | 2.75d |
| 206 |  | Drum and Drum Connections Complete | 0h | 2026-09-17 13:00 | 2026-09-17 13:00 | 205 | 2.75d |
| 207 |  | Penthouse Maintenance Complete | 0h | 2026-09-17 13:00 | 2026-09-17 13:00 | 191, 194, 197, 200, 206 | 2.75d |
| 208 | 2.2.5 | **Secondary Superheater Outlet Header (5)** | 3.2d | 2026-09-16 21:00 | 2026-09-23 02:00 |  | 0d |
| 209 |  | Remove lagging from secondary superheater outlet header - as per scope 5.1 | 24h | 2026-09-16 21:00 | 2026-09-17 21:00 | 140, 418 | 0d |
| 210 |  | Remove old thermocouples, identify and keep current thermocouples or replace as required (SSOH) | 2h | 2026-09-18 07:00 | 2026-09-18 09:00 | 209 | 0.65d |

| ID | WBS | Task | Duration | Start | Finish | Predecessors | Total float |
| --- | --- | --- | --- | --- | --- | --- | --- |
| 211 |  | Install stepping planks on bottom of header enclosure for safe access | 2h | 2026-09-17 21:00 | 2026-09-17 23:00 | 209 | 0d |
| 212 |  | Perform dry fused alumina blasting of secondary superheater outlet header - As per scope 5.2 | 4h | 2026-09-17 23:00 | 2026-09-18 03:00 | 211 | 0d |
| 213 |  | Vacuum blasting debris (SSOH) | 8h | 2026-09-18 03:00 | 2026-09-18 11:00 | 212 | 0.35d |
| 214 |  | Remove 300mm tube sample from secondary superheater outlet header & install new section of tube - as per scope 5.2 | 4h | 2026-09-18 11:00 | 2026-09-18 15:00 | 213 | 0.05d |
| 215 |  | Removed tube section from SSOH to be sent for analysis | 2h | 2026-09-18 15:00 | 2026-09-19 08:00 | 214 | 0d |
| 216 |  | Perform NDT of secondary superheater outlet header - as per scope 5.2 | 8h | 2026-09-19 08:00 | 2026-09-19 16:00 | 215 | 0d |
| 217 |  | Perform metallurgy testing of SSOH - as per scope 5.2 | 4h | 2026-09-21 07:00 | 2026-09-21 11:00 | 216 | 0.25d |
| 218 |  | Conduct visual inspection of secondary superheater outlet header | 3h | 2026-09-21 11:00 | 2026-09-21 14:00 | 217 | 0.15d |
| 219 |  | Install additional thermocouples as identified by engineering. This work is critical to review potential design excursions (SSOH) | 12h | 2026-09-18 09:00 | 2026-09-19 11:00 | 210 | 0.65d |
| 220 |  | Box up secondary superheater outlet header | 4h | 2026-09-21 14:00 | 2026-09-21 18:00 | 218, 219 | 0d |
| 221 |  | Install new insulation and reinstate cladding on secondary superheater outlet header - as per scope 5.1 | 32h | 2026-09-21 18:00 | 2026-09-23 02:00 | 220, 518 | 0d |
| 222 |  | Secondary Superheater Outlet Header Complete | 0h | 2026-09-23 02:00 | 2026-09-23 02:00 | 221 | 0.1d |
| 223 | 2.2.6 | **Primary Superheater Outlet Header (6)** | 1.6d | 2026-09-16 16:00 | 2026-09-19 08:30 |  | 1.6d |
| 224 |  | Remove cladding and insulation on primary superheater outlet header - as per scope 6.1 | 12h | 2026-09-16 16:00 | 2026-09-17 04:00 | 140 | 1.6d |
| 225 |  | Perform dry fused alumina blasting of primary superheater outlet header - As per scope 6.1 | 3h | 2026-09-18 03:00 | 2026-09-18 06:00 | 224, 212 | 0.8d |
| 226 |  | Vacuum blasting debris (PSOH) | 4h | 2026-09-18 06:00 | 2026-09-18 10:00 | 225 | 1.6d |
| 227 |  | Perform NDT of primary superheater outlet header - as per scope 6.1 | 6h | 2026-09-18 10:00 | 2026-09-18 16:00 | 226 | 1.6d |
| 228 |  | Conduct visual inspection of primary superheater outlet header | 2.5h | 2026-09-18 16:00 | 2026-09-19 08:30 | 227 | 1.6d |
| 229 |  | Primary Superheater Outlet Header Complete | 0h | 2026-09-19 08:30 | 2026-09-19 08:30 | 228 | 1.7d |
| 230 | 2.2.7 | **Superheater Enclosure (7)** | 2.45d | 2026-09-14 07:00 | 2026-09-17 08:00 |  | 3.25d |
| 231 | 2.2.7.1 | **Superheater Tube Bank (7.2)** | 0.25d | 2026-09-15 08:00 | 2026-09-15 10:30 |  | 4.05d |
| 232 |  | Conduct visual inspection of superheater tube bank - as per scope 7.2 | 2.5h | 2026-09-15 08:00 | 2026-09-15 10:30 | 327 | 4.05d |
| 233 |  | Superheater Tube Bank Complete | 0h | 2026-09-15 10:30 | 2026-09-15 10:30 | 232 | 4.6d |
| 234 | 2.2.7.2 | **Primary Superheater Outlet Tubes #7, 8 & 9 (7.3)** | 1.05d | 2026-09-14 07:00 | 2026-09-15 10:00 |  | 4d |
| 235 |  | Perform metallugical testing of primary superheater outlet tubes 7, 8 & 9 - as per scope 7.3 | 4h | 2026-09-14 07:00 | 2026-09-14 11:00 |  | 3.65d |
| 236 |  | Calculate useful remnant life of primary superheater outlet tubes 7, 8 & 9 based on results of OT and HT (HRL) | 8h | 2026-09-14 11:00 | 2026-09-15 10:00 | 235 | 3.25d |
| 237 |  | Primary Superheater Outlet Tubes #7, 8 & 9 complete | 0h | 2026-09-15 10:00 | 2026-09-15 10:00 | 236 | 4.65d |
| 238 | 2.2.7.3 | **Secondary Superheater Outlet Tubes #9, 10 (7.4)** | 2.45d | 2026-09-14 07:00 | 2026-09-17 08:00 |  | 3.25d |
| 239 |  | Review current tube metal thermocouples and recommend additional locations and installation methodology as required - as per scope 7.4 (secondary superheater outlet tubes #9 & 10) | 4h | 2026-09-15 10:00 | 2026-09-15 14:00 | 236 | 3.25d |
| 240 |  | Perform metallugical testing of secondary superheater outlet tubes #9 & 10 - as per scope 7.4 | 4h | 2026-09-15 14:00 | 2026-09-16 09:00 | 239 | 3.25d |
| 241 |  | Calculate useful remnant life of secondary superheater outlet tubes #9 & 10 based on results of OT and HT (HRL) | 8h | 2026-09-16 09:00 | 2026-09-17 08:00 | 240 | 3.25d |
| 242 |  | Add additional thermocouples as identified by engineering - as per scope 7.4 (secondary superheater outlet tubes #9 & 10) | 12h | 2026-09-14 07:00 | 2026-09-15 09:00 |  | 4.75d |
| 243 |  | Secondary Superheater Outlet Tubes #9 & 10 Complete | 0h | 2026-09-17 08:00 | 2026-09-17 08:00 | 241, 242 | 3.25d |
| 244 | 2.2.7.4 | **Superheater Enclosure Wall Tubes (7.5)** | 0.25d | 2026-09-15 10:30 | 2026-09-15 13:00 |  | 4.05d |
| 245 |  | Conduct visual inspection of superheater enclosure wall tubes - as per scope 7.5 | 2.5h | 2026-09-15 10:30 | 2026-09-15 13:00 | 232 | 4.05d |
| 246 |  | Superheater Enclosure Wall Tubes Complete | 0h | 2026-09-15 13:00 | 2026-09-15 13:00 | 245 | 4.35d |
| 247 | 2.2.7.5 | **Screen Wall Tubes (7.6)** | 0.25d | 2026-09-15 13:00 | 2026-09-15 15:30 |  | 4.05d |
| 248 |  | Conduct visual inspection of screen wall tubes - as per scope 7.6 | 2.5h | 2026-09-15 13:00 | 2026-09-15 15:30 | 245 | 4d |
| 249 |  | Screen Wall Tubes Complete | 0h | 2026-09-15 15:30 | 2026-09-15 15:30 | 248 | 4.1d |
| 250 | 2.2.7.6 | **Superheater Enclosure Headers (7.7)** | 0.85d | 2026-09-15 15:30 | 2026-09-17 08:00 |  | 3.25d |
| 251 |  | Conduct visual inspection of superheater enclosure headers - as per scope 7.7 | 2.5h | 2026-09-15 15:30 | 2026-09-16 08:00 | 248 | 4d |
| 252 |  | Superheater enclosure Headers Complete | 0h | 2026-09-17 08:00 | 2026-09-17 08:00 | 251, 237, 243, 246, 249 | 3.25d |
| 253 | 2.2.7.7 | **Superheater Safety Valve** | 0.4d | 2026-09-15 09:00 | 2026-09-15 13:00 |  | 4.35d |
| 254 |  | Changeout superheater safety valve with certified spare | 3h | 2026-09-15 09:00 | 2026-09-15 12:00 | 146 | 4.35d |
| 255 |  | 60T Crane to assist with superheater safety valve changeout | 3h | 2026-09-15 09:00 | 2026-09-15 12:00 | 146 | 4.45d |
| 256 |  | Send safety valves off-site for service & recertification | 1h | 2026-09-15 12:00 | 2026-09-15 13:00 | 254 | 4.35d |
| 257 |  | Superheater Safety Valve Complete | 0h | 2026-09-15 13:00 | 2026-09-15 13:00 | 254, 255, 256 | 4.35d |
| 258 | 2.2.8 | **Furnace (8)** | 1.5d | 2026-09-14 07:00 | 2026-09-15 14:30 |  | 4.8d |
| 259 | 2.2.8.1 | **Burners (8.2)** | 0.5d | 2026-09-15 02:30 | 2026-09-15 12:30 |  | 4d |
| 260 |  | Internal scaffold access to all 6 burners and inspection ports in sidewalls - Do not restrict access to refractory | 8h | 2026-09-15 02:30 | 2026-09-15 10:30 | 115 | 4d |
| 261 |  | Conduct visual inspection of all burners & inspection ports - as per scope 8.2 | 2h | 2026-09-15 10:30 | 2026-09-15 12:30 | 260 | 4.3d |
| 262 |  | Burner Maintenanec Complete | 0h | 2026-09-15 12:30 | 2026-09-15 12:30 | 261 | 4.4d |
| 263 | 2.2.8.2 | **Furnace Tubes (8.3)** | 0.2d | 2026-09-15 12:30 | 2026-09-15 14:30 |  | 4.2d |
| 264 |  | Conduct visual inspection of furnace tubes - as per scope 8.3 | 2h | 2026-09-15 12:30 | 2026-09-15 14:30 | 261 | 4.2d |
| 265 |  | Furnance Tubes Complete | 0h | 2026-09-15 14:30 | 2026-09-15 14:30 | 264 | 4.2d |
| 266 | 2.2.8.3 | **Burner Inspection Ports (8.4)** | 0.35d | 2026-09-14 07:00 | 2026-09-14 11:00 |  | 5.5d |
| 267 |  | Inspect & clean burner inspection port glass windows | 4h | 2026-09-14 07:00 | 2026-09-14 11:00 |  | 6.85d |
| 268 |  | Replace burner inspection port air hoses | 4h | 2026-09-14 07:00 | 2026-09-14 11:00 |  | 5.35d |
| 269 |  | Burner Inspection Port Maintenance Complete | 0h | 2026-09-14 11:00 | 2026-09-14 11:00 | 268 | 5.35d |
| 270 | 2.2.9 | **Economiser (9)** | 0.6d | 2026-09-15 06:30 | 2026-09-15 13:30 |  | 3.2d |
| 271 |  | Install marine ply boards flat ontop of economiser fin tubes to enable engineering inspection | 2h | 2026-09-15 06:30 | 2026-09-15 08:30 | 186 | 3.1d |
| 272 |  | Conduct visual inspection of economiser - as per scope 9.1 | 3h | 2026-09-15 08:30 | 2026-09-15 11:30 | 271 | 4.4d |
| 273 |  | Remove marine ply boards used for economiser inspections | 2h | 2026-09-15 11:30 | 2026-09-15 13:30 | 272 | 4.3d |
| 274 |  | Economiser Complete | 0h | 2026-09-15 13:30 | 2026-09-15 13:30 | 273 | 4.3d |
| 275 | 2.2.10 | **HS Piping (10)** | 3.25d | 2026-09-15 07:00 | 2026-09-21 08:00 |  | 0.8d |
| 276 |  | Remove lagging on HS piping - as per scope 10.1 & 10.2 | 24h | 2026-09-15 13:00 | 2026-09-16 13:00 | 443 | 0.25d |
| 277 |  | Perform fused alumina blasting of HS piping exposed welds - as per scope 10.1 | 5h | 2026-09-16 18:00 | 2026-09-16 23:00 | 276 | 0.8d |
| 278 |  | Vacuum blasting debris (HS Piping) | 12h | 2026-09-16 23:00 | 2026-09-17 13:00 | 277 | 0.8d |
| 279 |  | Perform NDT on HS piping - as per scope 10.1 | 8h | 2026-09-17 13:00 | 2026-09-18 12:00 | 278 | 0.35d |
| 280 |  | Perform metallugical testing of HS piping - as per scope 10.1 | 12h | 2026-09-18 12:00 | 2026-09-19 15:00 | 279 | 0.35d |

| ID | WBS | Task | Duration | Start | Finish | Predecessors | Total float |
| --- | --- | --- | --- | --- | --- | --- | --- |
| 281 |  | Conduct visual inspection of HS piping & pipe hangers - as per scope 10.1 & 10.2 | 3h | 2026-09-19 15:00 | 2026-09-20 08:00 | 280 | 0.8d |
| 282 | 2.2.10.7 | **Adhoc Maintenance - HS Piping** | 2.95d | 2026-09-15 07:00 | 2026-09-18 13:00 |  | 1.15d |
| 283 | 2.2.10.7.1 | **Replace Faulty HS Flow Element (Adhoc) (10.2)** | 2.45d | 2026-09-15 07:00 | 2026-09-18 08:00 |  | 1.25d |
| 284 |  | Cut out and remove existing HS flow element | 5h | 2026-09-15 07:00 | 2026-09-15 12:00 | 115 | 1.9d |
| 285 |  | Install new HS Flow element, with appropriate Weld Procedure | 5h | 2026-09-15 12:00 | 2026-09-15 17:00 | 284 | 1.9d |
| 286 |  | Perform NDT of welds on newly installed HS flow element BEFORE PWHT | 2h | 2026-09-16 07:00 | 2026-09-16 09:00 | 285 | 1.9d |
| 287 |  | Perform post weld heat treatment of HS flow element welds | 12h | 2026-09-16 09:00 | 2026-09-17 11:00 | 286 | 1.25d |
| 288 |  | Perform NDT of welds on newly installed HS flow element AFTER PWHT | 4h | 2026-09-17 11:00 | 2026-09-17 15:00 | 287 | 1.05d |
| 289 |  | Perform calibration of DP transmitter to suit new flow element characteristics | 2h | 2026-09-17 15:00 | 2026-09-17 17:00 | 288 | 1.05d |
| 290 |  | Inspect removed flow element to determine cause of deviation | 1h | 2026-09-18 07:00 | 2026-09-18 08:00 | 289 | 1.2d |
| 291 |  | HS Flow Element Replacement Complete | 0h | 2026-09-18 08:00 | 2026-09-18 08:00 | 290 | 1.25d |
| 292 | 2.2.10.7.2 | **Westarc - Changeout leaking gate valve on BLR1 HS Line** | 0.5d | 2026-09-18 08:00 | 2026-09-18 13:00 |  | 1.15d |
| 293 |  | Changeout leaking gate valve on BLR1 HS Line | 3h | 2026-09-18 08:00 | 2026-09-18 11:00 | 291 | 1.25d |
| 294 |  | Mpi welds after hs line valve replacement | 2h | 2026-09-18 11:00 | 2026-09-18 13:00 | 293 | 1.15d |
| 295 |  | Adhoc Maintenance - HS Piping - Complete | 0h | 2026-09-18 13:00 | 2026-09-18 13:00 | 294, 291 | 1.15d |
| 296 |  | Reinstante lagging on HS Piping | 24h | 2026-09-20 08:00 | 2026-09-21 08:00 | 291, 281, 518, 295 | 0.9d |
| 297 |  | HS Piping Maintenance Complete | 0h | 2026-09-21 08:00 | 2026-09-21 08:00 | 296 | 1.65d |
| 298 | 2.2.11 | **Flash Tank & Blowdown Vessel (11)** | 4d | 2026-09-13 23:00 | 2026-09-19 15:00 |  | 2.4d |
| 299 | 2.2.11.1 | **Flash Tank (11.2)** | 4d | 2026-09-13 23:00 | 2026-09-19 13:00 |  | 2.4d |
| 300 |  | Perform fused alumina blasting of exposed external door welds, nozzle welds, and support leg attachment welds (FLT) | 3h | 2026-09-13 23:00 | 2026-09-14 02:00 | 118 | 4d |
| 301 |  | Vacuum blasting debris (FLT) | 4h | 2026-09-14 02:00 | 2026-09-14 09:00 | 300 | 5.45d |
| 302 |  | Perform NDT of flash tank – as per scope 11.2 | 8h | 2026-09-14 09:00 | 2026-09-15 08:00 | 301 | 5.45d |
| 303 |  | Conduct visual inspection of flash tank – Internal and External | 2h | 2026-09-15 08:00 | 2026-09-15 10:00 | 302 | 5.35d |
| 304 | 2.2.11.1.5 | **Flash Tank Maintenance** | 3.2d | 2026-09-15 02:30 | 2026-09-19 13:00 |  | 2.4d |
| 305 |  | Remove flash tank fisher control valve & prepare for transport | 2h | 2026-09-15 02:30 | 2026-09-15 04:30 | 115 | 3.2d |
| 306 |  | Remove flash tank leveltrol & prepare for transport | 2h | 2026-09-15 04:30 | 2026-09-15 06:30 | 305 | 3.2d |
| 307 |  | Remove flash tank safety valve & prepare for transport | 2h | 2026-09-15 06:30 | 2026-09-15 08:30 | 306 | 3.1d |
| 308 |  | Franna to assist with removing flash tank valves & leveltrol | 6h | 2026-09-15 07:00 | 2026-09-15 13:00 | 115 | 5.05d |
| 309 |  | WPC to service flash tank fisher control valve & leveltrol | 4ed | 2026-09-15 06:30 | 2026-09-19 06:30 | 306 | 10.05d |
| 310 |  | Valvology - Service and re-certify flash tank safety valve | 4ed | 2026-09-15 08:30 | 2026-09-19 08:30 | 307 | 10.75d |
| 311 |  | Install flash tank fisher control valve | 2h | 2026-09-19 06:30 | 2026-09-19 08:30 | 309 | 2.4d |
| 312 |  | Install flash tank leveltrol | 2h | 2026-09-19 08:30 | 2026-09-19 10:30 | 311 | 2.4d |
| 313 |  | Install flash tank safety valve | 2h | 2026-09-19 10:30 | 2026-09-19 12:30 | 310, 312 | 2.4d |
| 314 |  | Franna to assist with installing flash tank valves & leveltrol | 6h | 2026-09-19 07:00 | 2026-09-19 13:00 | 309 | 1.95d |
| 315 |  | Flash Tank Complete | 0h | 2026-09-19 13:00 | 2026-09-19 13:00 | 303, 308, 313, 314 | 2.4d |
| 316 | 2.2.11.2 | **Blowdown Vessel (11.3)** | 0.75d | 2026-09-14 02:00 | 2026-09-14 15:00 |  | 4d |
| 317 |  | Perform fused alumina blasting of exposed external manway welds (BDV) | 2h | 2026-09-14 02:00 | 2026-09-14 04:00 | 300 | 4d |
| 318 |  | Vacuum blasting debris (BDV) | 4h | 2026-09-14 04:00 | 2026-09-14 09:00 | 317 | 5.75d |
| 319 |  | Perform NDT of blowdown vessel – as per scope 11.3 | 4h | 2026-09-14 09:00 | 2026-09-14 13:00 | 318 | 5.8d |
| 320 |  | Conduct visual inspection of blowdown vessel – Internal and External | 2h | 2026-09-14 13:00 | 2026-09-14 15:00 | 319 | 5.65d |
| 321 |  | Blowdown Vessel Complete | 0h | 2026-09-14 15:00 | 2026-09-14 15:00 | 320 | 5.65d |
| 322 |  | Remove CSE – Flash Tank door #16 and Blowdown Vessel door #17 | 2h | 2026-09-19 13:00 | 2026-09-19 15:00 | 315, 321 | 2.4d |
| 323 |  | Flash Tank & Blowdown Vessel Complete | 0h | 2026-09-19 15:00 | 2026-09-19 15:00 | 322 | 2.4d |
| 324 | 2.2.12 | **FD Fan (12)** | 4d | 2026-09-14 07:00 | 2026-09-18 17:00 |  | 1.6d |
| 325 | 2.2.12.1 | **FD Fan and Inlet Attenuation Module Inspection** | 3.05d | 2026-09-15 07:00 | 2026-09-18 14:00 |  | 0.8d |
| 326 | 2.2.12.1.1 | **FD Fan Maintenance** | 3.05d | 2026-09-15 07:00 | 2026-09-18 14:00 |  | 1.85d |
| 327 |  | Visually inspect inlet guide vanes, bushes, and linkages | 1h | 2026-09-15 07:00 | 2026-09-15 08:00 | 105 | 2.4d |
| 328 |  | Ensure IGV bushes are protected from water and debris intrusion prior to LPW of Fan impeller | 2h | 2026-09-13 19:00 | 2026-09-13 21:00 |  | 2.85d |
| 329 |  | LPW FD fan impeller | 8h | 2026-09-13 21:00 | 2026-09-14 11:00 | 328 | 2.9d |
| 330 |  | Remove FD fan bearings and strip shaft ready for NDT | 12h | 2026-09-15 08:00 | 2026-09-16 10:00 | 329, 344, 327 | 2.15d |
| 331 |  | Perform NDT of FD fan shaft | 6h | 2026-09-16 10:00 | 2026-09-16 16:00 | 330 | 1.6d |
| 332 |  | Install new FD fan bearings and inpro seals | 12h | 2026-09-16 16:00 | 2026-09-18 08:00 | 331 | 1.05d |
| 333 |  | Service Automatic Lubricators | 2h | 2026-09-18 08:00 | 2026-09-18 10:00 | 332 | 1.05d |
| 334 |  | Changeout FD fan actuator ram | 2h | 2026-09-18 10:00 | 2026-09-18 12:00 | 333 | 1.95d |
| 335 |  | Stroke test and confirm smooth operation of IGV | 2h | 2026-09-18 12:00 | 2026-09-18 14:00 | 334 | 1.85d |
| 336 | 2.2.12.1.2 | **Replace FD Fan Outlet Expansion Joint** | 2.15d | 2026-09-15 10:00 | 2026-09-18 03:00 |  | 0.55d |
| 337 |  | Partial insulation removal as required to enable access to all expansion joint bolts | 6h | 2026-09-15 10:00 | 2026-09-15 16:00 | 371 | 0d |
| 338 |  | Replace FD fan outlet expansion joint | 12h | 2026-09-15 16:00 | 2026-09-16 04:00 | 337 | 3.9d |
| 339 |  | Refit insulation after replacement of FD Fan outlet expansion joint | 6h | 2026-09-17 21:00 | 2026-09-18 03:00 | 338, 518 | 2.4d |
| 340 |  | Conduct visual inspection of FD fan - As per scope 12.2 | 1h | 2026-09-16 10:00 | 2026-09-16 11:00 | 330, 337 | 3.75d |
| 341 | 2.2.12.2 | **FD Fan Motor** | 4d | 2026-09-14 07:00 | 2026-09-18 17:00 |  | 1d |
| 342 |  | Raise HV permit for FD fan motor | 1h | 2026-09-14 07:00 | 2026-09-14 08:00 |  | 2.75d |
| 343 |  | Disconnect FD fan motor ready for changeout | 2h | 2026-09-14 08:00 | 2026-09-14 10:00 | 342 | 2.8d |
| 344 |  | Remove FD fan motor and send to RIMS yard | 4h | 2026-09-14 10:00 | 2026-09-14 14:00 | 343 | 2.6d |
| 345 |  | 25t crane to assist with FD fan motor removal | 4h | 2026-09-14 10:00 | 2026-09-14 14:00 | 343 | 3.95d |
| 346 |  | Review report for new motor and confirm correct grease has been used - Mobilith SHC100 (AML381) | 1h | 2026-09-18 10:00 | 2026-09-18 11:00 | 344, 333 | 1.05d |
| 347 |  | Install new FD fan motor | 4h | 2026-09-18 11:00 | 2026-09-18 15:00 | 346 | 0.85d |
| 348 |  | 25T crane to assist with FD fan motor installation | 4h | 2026-09-18 11:00 | 2026-09-18 15:00 | 346, 345 | 0.85d |
| 349 |  | Connect new FD fan motor | 2h | 2026-09-18 15:00 | 2026-09-18 17:00 | 347, 348 | 0.85d |
| 350 | 2.2.12.3 | **Adhoc Maintenance - FD Fan** | 0.25d | 2026-09-14 07:00 | 2026-09-14 10:00 |  | 5.45d |

| ID | WBS | Task | Duration | Start | Finish | Predecessors | Total float |
| --- | --- | --- | --- | --- | --- | --- | --- |
| 351 |  | Fit auto drain to fd fan bypass instrumentation | 2h | 2026-09-14 07:00 | 2026-09-14 09:00 |  | 5.55d |
| 352 |  | Extend FD fan shaft guard | 3h | 2026-09-14 07:00 | 2026-09-14 10:00 |  | 5.45d |
| 353 |  | Adhoc Maintenance - FD Fan - Complete | 0h | 2026-09-14 10:00 | 2026-09-14 10:00 | 352, 351 | 5.45d |
| 354 |  | FD Fan Complete | 0h | 2026-09-18 17:00 | 2026-09-18 17:00 | 349, 339, 353 | 1.7d |
| 355 | 2.2.13 | **RAH & Ducting (13)** | 4d | 2026-09-14 07:00 | 2026-09-19 19:00 |  | 0.8d |
| 356 |  | Erect falls protection barricades & install access ladders for doors #2, #3 & FD fan - as per scope 13.1.10-13 | 5h | 2026-09-14 13:00 | 2026-09-14 18:00 | 69 | 0d |
| 357 |  | Strip lagging around RAH drive gear to allow inspection | 4h | 2026-09-14 18:00 | 2026-09-14 22:00 | 356 | 0d |
| 358 | 2.2.13.3 | **Rotary Air Heater Drive Mechanism (13.2)** | 0.4d | 2026-09-15 07:00 | 2026-09-15 11:30 |  | 4.5d |
| 359 |  | Conduct visual inspection of drive gear, pin rack and gearbox | 1.5h | 2026-09-15 07:00 | 2026-09-15 08:30 | 357 | 4.7d |
| 360 |  | Lubricate and maintain drive gear | 3h | 2026-09-15 08:30 | 2026-09-15 11:30 | 359 | 4.5d |
| 361 | 2.2.13.4 | **Rotary Air Heater Body & Bearings (13.3)** | 1d | 2026-09-14 22:00 | 2026-09-16 09:30 |  | 3.2d |
| 362 |  | Conduct inspection of RAH hot and cold end bearings and note clearances | 4h | 2026-09-14 22:00 | 2026-09-15 02:00 | 357 | 3.2d |
| 363 |  | Conduct inspection and service of hot end oil system cooler, pump and filters | 4h | 2026-09-15 02:00 | 2026-09-15 06:00 | 362 | 3.2d |
| 364 |  | Conduct visual inspection of RAH hot and cold end baskets | 2.5h | 2026-09-15 07:00 | 2026-09-15 09:30 | 363 | 3.55d |
| 365 |  | Install RAH anti-rotation locking device | 1h | 2026-09-15 09:30 | 2026-09-15 10:30 | 364 | 3.6d |
| 366 |  | Conduct visual inspection of RAH radial and circumferential seals, hot and cold end | 2.5h | 2026-09-15 10:30 | 2026-09-15 13:00 | 365 | 3.45d |
| 367 |  | Replace RAH radial and circumferential seals if required as after inspection | 10h | 2026-09-15 13:00 | 2026-09-15 23:00 | 366 | 3.45d |
| 368 |  | Measure and record circumferential and radial seal clearances, hot and cold end | 4h | 2026-09-15 23:00 | 2026-09-16 03:00 | 367 | 3.5d |
| 369 |  | Conduct visual inspection of RAH by engineering | 2.5h | 2026-09-16 07:00 | 2026-09-16 09:30 | 368 | 3.8d |
| 370 | 2.2.13.5 | **RAH Expansion Joints (13.4)** | 3.2d | 2026-09-14 22:00 | 2026-09-19 09:00 |  | 0d |
| 371 |  | Strip lagging for expansion joint replacement | 12h | 2026-09-14 22:00 | 2026-09-15 10:00 | 357 | 0d |
| 372 |  | Replace gas inlet expansion joint (hot end) | 24h | 2026-09-16 02:30 | 2026-09-17 02:30 | 371, 382 | 1.6d |
| 373 |  | Replace gas outlet expansion joint (cold end) | 24h | 2026-09-17 02:30 | 2026-09-18 02:30 | 372 | 1.35d |
| 374 |  | Replace air outlet (hot end) expansion joint | 24h | 2026-09-18 02:30 | 2026-09-19 02:30 | 373 | 1.35d |
| 375 |  | Conduct detailed inspection of RAH gas inlet and outlet expansion joints after installation | 2h | 2026-09-19 07:00 | 2026-09-19 09:00 | 374 | 1.35d |
| 376 | 2.2.13.6 | **Flue Gas and Air Ducting (13.5)** | 3.2d | 2026-09-15 07:00 | 2026-09-19 11:00 |  | 1.7d |
| 377 |  | Stroke test bypass and main dampers for full fucntionality and smooth operation | 2h | 2026-09-15 07:00 | 2026-09-15 09:00 | 357 | 4.75d |
| 378 |  | Conduct internal inspection of RAH gas and air ducting - as per scope 13.5 | 2h | 2026-09-19 09:00 | 2026-09-19 11:00 | 375 | 1.55d |
| 379 | 2.2.13.7 | **RAH Fire Control System (13.6)** | 0d | 2026-09-16 03:00 | 2026-09-16 04:00 |  | 4d |
| 380 |  | Inspect condition of RAH fire system inside RAH ducting | 1h | 2026-09-16 03:00 | 2026-09-16 04:00 | 368 | 4d |
| 381 | 2.2.13.8 | **Stack (13.7)** | 0.8d | 2026-09-15 02:30 | 2026-09-16 02:30 |  | 2.95d |
| 382 |  | Replace stack inlet expansion joint | 24h | 2026-09-15 02:30 | 2026-09-16 02:30 | 115 | 2.4d |
| 383 |  | Visually inspect Stack internal surface | 2.5h | 2026-09-15 07:00 | 2026-09-15 09:30 | 115 | 4.7d |
| 384 |  | Replace RAH insulation with new upon completion of inspection. Re-use cladding if in acceptable condition | 8h | 2026-09-19 11:00 | 2026-09-19 19:00 | 369, 375, 378, 518 | 1.6d |
| 385 |  | Strip RAH falls protection barricades & access ladders for doors #2, #3 & FD fan | 4h | 2026-09-19 11:00 | 2026-09-19 15:00 | 369, 375, 378 | 1.6d |
| 386 | 2.2.13.11 | **Adhoc Maintenance** | 1.95d | 2026-09-14 07:00 | 2026-09-16 11:00 |  | 3.75d |
| 387 |  | Replace worn linkage on rah bypass damper | 4h | 2026-09-16 07:00 | 2026-09-16 11:00 | 368 | 3.75d |
| 388 | 2.2.13.11.2 | **Changeout RAH gearbox motor - leaking oil** | 0.55d | 2026-09-14 07:00 | 2026-09-14 13:00 |  | 5.15d |
| 389 |  | Disconnect RAH gearbox motor | 1h | 2026-09-14 07:00 | 2026-09-14 08:00 |  | 5.3d |
| 390 |  | Changeout RAH gearbox motor | 3h | 2026-09-14 08:00 | 2026-09-14 11:00 | 389 | 5.25d |
| 391 |  | Reconnect RAH gearbox motor | 2h | 2026-09-14 11:00 | 2026-09-14 13:00 | 390 | 5.15d |
| 392 |  | RAH & Ducting Maintenance Complete | 0h | 2026-09-19 19:00 | 2026-09-19 19:00 | 360, 369, 375, 378, 384, 385, 380, 377, 383, 387, 391 | 1.7d |
| 393 | 2.2.14 | **Windbox and Air Registers (14)** | 2.3d | 2026-09-15 08:30 | 2026-09-17 19:30 |  | 2.5d |
| 394 |  | Erect access scaffold to allow access to windbox and air registers - as per scope 14.1 | 8h | 2026-09-15 08:30 | 2026-09-15 16:30 | 271 | 2.65d |
| 395 |  | Stroke test and lubricate air registers | 2h | 2026-09-15 16:30 | 2026-09-16 08:30 | 394 | 2.65d |
| 396 |  | Clean up windbox | 2h | 2026-09-17 08:30 | 2026-09-17 10:30 | 395, 400 | 2.75d |
| 397 |  | Conduct visual inspection of burners, air registers, rear of furnace front wall tubes, casing, turning vanes, and expansion joints | 3h | 2026-09-17 10:30 | 2026-09-17 13:30 | 396 | 2.6d |
| 398 |  | Strip windbox and air register access scaffolds ready for box up | 6h | 2026-09-17 13:30 | 2026-09-17 19:30 | 397 | 2.5d |
| 399 | 2.2.14.6 | **Adhoc Maintenance - Windbox and Air Registers** | 0.8d | 2026-09-16 08:30 | 2026-09-17 08:30 |  | 2.75d |
| 400 |  | Re-align tracking on burner 1 air register - currently not meeting closed limits | 10h | 2026-09-16 08:30 | 2026-09-17 08:30 | 395 | 2.75d |
| 401 |  | Windbox and Air Registers Maintainence Complete | 0h | 2026-09-17 19:30 | 2026-09-17 19:30 | 398 | 2.5d |
| 402 | 2.2.15 | **Drains & Blowdown System General (15)** | 4d | 2026-09-14 04:00 | 2026-09-18 17:00 |  | 1.7d |
| 403 | 2.2.15.1 | **Drains & Blowdown System General - Above Ground Level (15.2)** | 4d | 2026-09-14 04:00 | 2026-09-18 17:00 |  | 1.7d |
| 404 |  | Perform fused alumina blasting of all above ground drain & blowdown piping welds - as per scope 15 | 4h | 2026-09-14 04:00 | 2026-09-14 20:00 | 317 | 3.2d |
| 405 |  | Sweep blast of all piping to enable accurate UTWT, removing surface corrosion - drains & blowdown ablove ground | 4h | 2026-09-14 20:00 | 2026-09-15 00:00 | 404 | 3.2d |
| 406 |  | Perform NDT of drains & blowdown system (above ground) | 12h | 2026-09-15 07:00 | 2026-09-16 10:00 | 405 | 3.2d |
| 407 |  | Conduct visual inspection and review UTWT of all drains & blowdown lines - as per scope 15.2 | 2h | 2026-09-16 10:00 | 2026-09-16 12:00 | 406 | 3.25d |
| 408 |  | Re-instate lagging on drains & blowdown system (Above ground level) - as per scope 15.2 | 20h | 2026-09-17 21:00 | 2026-09-18 17:00 | 407, 518 | 1.7d |
| 409 |  | Drains & Blowdown System General (Above Ground Level) Maintenance Complete | 0h | 2026-09-18 17:00 | 2026-09-18 17:00 | 408 | 1.7d |
| 410 | 2.2.15.2 | **Drains & Blowdown System General - Ground Level (15.3)** | 2.95d | 2026-09-15 00:00 | 2026-09-18 13:00 |  | 1.95d |
| 411 |  | Perform fused alumina blasting of all ground level drain & blowdown piping welds - as per scope 15.3 | 3h | 2026-09-15 00:00 | 2026-09-15 03:00 | 405 | 3.2d |
| 412 |  | Sweep blast of all piping to enable accurate UTWT, removing surface corrosion - drains & blowdown ground level | 3h | 2026-09-15 03:00 | 2026-09-15 06:00 | 411 | 3.2d |
| 413 |  | Perform NDT of drains & blowdown system (ground level) | 10h | 2026-09-15 07:00 | 2026-09-16 08:00 | 412 | 3.8d |
| 414 |  | Conduct visual inspection and review UTWT of all drains & blowdown lines - as per scope 15.3 | 2h | 2026-09-16 08:00 | 2026-09-16 10:00 | 413 | 3.75d |
| 415 |  | Re-instate lagging on drains & blowdown system (ground level) - as per scope 15.3 | 16h | 2026-09-17 21:00 | 2026-09-18 13:00 | 414, 518 | 1.95d |
| 416 |  | Drains & Blowdown System General (Ground Level) Maintenance Complete | 0h | 2026-09-18 13:00 | 2026-09-18 13:00 | 415 | 1.95d |
| 417 | 2.2.16 | **Integral Piping (16)** | 1.6d | 2026-09-16 17:00 | 2026-09-19 16:30 |  | 0d |
| 418 |  | Strip lagging around attemperator line 4-way support bracket | 4h | 2026-09-16 17:00 | 2026-09-16 21:00 | 154 | 0d |
| 419 |  | Perform fused alumina blasting of integral piping welds - as per scope 16.1 | 2h | 2026-09-19 03:00 | 2026-09-19 05:00 | 418, 141 | 0.8d |
| 420 |  | Perform NDT of Integral piping - as per scope 16.1 | 4h | 2026-09-19 07:00 | 2026-09-19 11:00 | 419 | 1.2d |

| ID | WBS | Task | Duration | Start | Finish | Predecessors | Total float |
| --- | --- | --- | --- | --- | --- | --- | --- |
| 421 |  | Conduct visual inspection of integral piping including hot/cold position hangers - as per scope 16.1 | 1.5h | 2026-09-19 11:00 | 2026-09-19 12:30 | 420 | 1.6d |
| 422 |  | Re-instate lagging around attemperator line 4-way support bracket | 4h | 2026-09-19 12:30 | 2026-09-19 16:30 | 421, 518 | 1.6d |
| 423 |  | Integral Piping Maintenance Complete | 0h | 2026-09-19 16:30 | 2026-09-19 16:30 | 422 | 1.7d |
| 424 | 2.2.17 | **Natural Gas System (17)** | 1.55d | 2026-09-14 07:00 | 2026-09-15 15:00 |  | 4.3d |
| 425 |  | Clean and inspect gas system inline with gas regulations | 3h | 2026-09-14 07:00 | 2026-09-14 10:00 |  | 6.95d |
| 426 | 2.2.17.2 | **Gas Valves** | 1.05d | 2026-09-14 07:00 | 2026-09-15 10:00 |  | 4.65d |
| 427 |  | Disconnect any failed gas valves ready for replacement | 2h | 2026-09-14 07:00 | 2026-09-14 09:00 |  | 4.65d |
| 428 |  | Replace any gas valves that have failed pressure test | 4h | 2026-09-14 09:00 | 2026-09-14 13:00 | 427 | 4.65d |
| 429 |  | Changeout burner 1 & 3 manual block valves | 3h | 2026-09-14 13:00 | 2026-09-14 16:00 | 428 | 4.65d |
| 430 |  | Remove and clean gas valve strainers | 2h | 2026-09-14 16:00 | 2026-09-15 08:00 | 429 | 4.7d |
| 431 |  | Reconnect all gas valves | 2h | 2026-09-15 08:00 | 2026-09-15 10:00 | 430 | 4.65d |
| 432 |  | Gas Valve Maintenance Complete | 0h | 2026-09-15 10:00 | 2026-09-15 10:00 | 431 | 4.65d |
| 433 | 2.2.17.3 | **Gas Pressure Regulator Valve (Axial PRV)** | 1.55d | 2026-09-14 07:00 | 2026-09-15 15:00 |  | 4.15d |
| 434 |  | Disconnect gas pressure regulator valve (axial PRV) | 1h | 2026-09-14 07:00 | 2026-09-14 08:00 |  | 4.3d |
| 435 |  | Remove gas pressure regulator valve (axial PRV) for overhaul | 3h | 2026-09-14 08:00 | 2026-09-14 11:00 | 434 | 4.35d |
| 436 |  | Overhaul gas pressure regulator valve (axial PRV) | 10h | 2026-09-14 11:00 | 2026-09-15 11:00 | 435 | 4.35d |
| 437 |  | Re-install gas pressure regulator valve (axial PRV) after overhaul | 3h | 2026-09-15 11:00 | 2026-09-15 14:00 | 436 | 4.15d |
| 438 |  | Reconnect gas pressure regulator valve (axial PRV) | 1h | 2026-09-15 14:00 | 2026-09-15 15:00 | 437 | 4.15d |
| 439 |  | Gas Pressure Regulator Valve (Axial PRV) Maintenance Complete | 0h | 2026-09-15 15:00 | 2026-09-15 15:00 | 438 | 4.15d |
| 440 |  | Changeout LPG ignition gas regulator and valves | 3h | 2026-09-14 07:00 | 2026-09-14 10:00 |  | 5.45d |
| 441 |  | Natural Gas System Maintenance Complete | 0h | 2026-09-15 15:00 | 2026-09-15 15:00 | 440, 439, 432 | 4.15d |
| 442 | 2.2.18 | **HS Header (19)** | 3.45d | 2026-09-14 13:00 | 2026-09-18 21:00 |  | 0.25d |
| 443 |  | Strip lagging on HS header for inspection & NDT - as per scope 19.1 | 24h | 2026-09-14 13:00 | 2026-09-15 13:00 | 69 | 0.25d |
| 444 |  | perform dry fused alumina blasting on HS header | 5h | 2026-09-15 18:00 | 2026-09-15 23:00 | 443 | 2.4d |
| 445 |  | Perform NDT of HS header - as per scope 19.1 | 10h | 2026-09-16 07:00 | 2026-09-17 08:00 | 444 | 2.35d |
| 446 |  | Metallurgical replicas of HS header to be taken - as per scope 19.1 | 12h | 2026-09-16 07:00 | 2026-09-17 10:00 | 444 | 3.05d |
| 447 |  | Conduct visual inspection of HS header & sign off for lagging to be reinstalled | 3h | 2026-09-17 08:00 | 2026-09-17 11:00 | 445 | 2.15d |
| 448 |  | Re-Instate lagging on HS header | 24h | 2026-09-17 21:00 | 2026-09-18 21:00 | 447, 518 | 1.7d |
| 449 |  | HS Header Maintenance Complete | 0h | 2026-09-18 21:00 | 2026-09-18 21:00 | 448, 445, 446 | 1.7d |
| 450 | 2.2.19 | **PDSHUT289 - Boiler 1 Electrical Maintenance** | 3.85d | 2026-09-14 10:00 | 2026-09-21 08:30 |  | 1.6d |
| 451 |  | PDMAIN09 - HV STARTER MAJOR MAINTENANCE - STARTER-WG110-FDB001 | 3h | 2026-09-19 07:00 | 2026-09-19 10:00 | 349 | 1.3d |
| 452 |  | PDMAIN40 - MOTOR OVERHAUL - MOTOR-WG110-FDB001 | 1h | 2026-09-19 10:00 | 2026-09-19 11:00 | 451 | 1.6d |
| 453 |  | PDMAIN22 - HV CABLE MAINTENANCE - CABLE-WG110-FDB001 | 2h | 2026-09-19 11:00 | 2026-09-19 13:00 | 452 | 1.6d |
| 454 |  | PDMAIN09 - HV CONTACTOR MAINTENANCE - STARTER-WG110-FDB001 | 8h | 2026-09-19 07:00 | 2026-09-19 15:00 | 349 | 1d |
| 455 |  | Protection Relay??? | 1h | 2026-09-21 07:30 | 2026-09-21 08:30 | 454 | 1.6d |
| 456 |  | PDSHUT289 Complete | 0h | 2026-09-21 08:30 | 2026-09-21 08:30 | 453, 455 | 1.6d |
| 457 | 2.2.19.7 | **LV Starter Maintenance** | 0.15d | 2026-09-14 10:00 | 2026-09-14 11:30 |  | 5.3d |
| 458 |  | PDMAIN34 - LV STARTER (POWERHOUSE) MAINTENANCE - STARTER-WG110-101HEV08 | 0.5h | 2026-09-14 10:00 | 2026-09-14 10:30 | 73 | 21.3d |
| 459 |  | PDMAIN34 - LV STARTER (POWERHOUSE) MAINTENANCE - STARTER-WG110-101HEV09 | 0.5h | 2026-09-14 10:30 | 2026-09-14 11:00 | 458 | 21.3d |
| 460 |  | PDMAIN34 - LV STARTER (POWERHOUSE) MAINTENANCE - STARTER-WG110-RAL101 | 0.5h | 2026-09-14 11:00 | 2026-09-14 11:30 | 459 | 21.3d |
| 461 |  | LV Starter Maintenance Complete | 0h | 2026-09-14 11:30 | 2026-09-14 11:30 | 460 | 5.3d |
| 462 | 2.2.20 | **BMS & Critical non BMS Instruments** | 2.25d | 2026-09-14 07:00 | 2026-09-16 14:00 |  | 3.45d |
| 463 | 2.2.20.1 | **Instrumentation route - BMS Temp Transmitters** | 0.35d | 2026-09-14 07:00 | 2026-09-14 11:00 |  | 3.65d |
| 464 |  | 101TT17 Boiler 1 Air Heater Air Outlet Temperature | 0.4h | 2026-09-14 07:00 | 2026-09-14 07:24 |  | 4d |
| 465 |  | 101TT18 Boiler 1 Final Steam Temperature | 0.4h | 2026-09-14 07:24 | 2026-09-14 07:48 | 464 | 3.97d |
| 466 |  | 101TT20 Boiler 1 Air Heater Gas Outlet Temperature | 0.4h | 2026-09-14 07:48 | 2026-09-14 08:12 | 465 | 3.93d |
| 467 |  | 101TT21 Boiler 1 Air Heater Air Inlet Temperature | 0.4h | 2026-09-14 08:12 | 2026-09-14 08:36 | 466 | 3.89d |
| 468 |  | 101TT22 Boiler 1 Air heater Gas Inlet Temperature | 0.4h | 2026-09-14 08:36 | 2026-09-14 09:00 | 467 | 3.85d |
| 469 |  | 101TT24 Boiler 1 Primary Superheater Outlet Temperature | 0.4h | 2026-09-14 09:00 | 2026-09-14 09:24 | 468 | 3.81d |
| 470 |  | 101TT25 Boiler 1 Secondary Superheater Inlet Temperature | 0.4h | 2026-09-14 09:24 | 2026-09-14 09:48 | 469 | 3.77d |
| 471 |  | 101TT42 Boiler 1 Air Heater Bearing Temperature | 0.4h | 2026-09-14 09:48 | 2026-09-14 10:12 | 470 | 3.73d |
| 472 |  | 101TT43 Boiler 1 Air Heater Bearing Temperature | 0.4h | 2026-09-14 10:12 | 2026-09-14 10:36 | 471 | 3.69d |
| 473 |  | 101TT50 Boiler 1 Gas Header Temperature | 0.4h | 2026-09-14 10:36 | 2026-09-14 11:00 | 472 | 3.65d |
| 474 | 2.2.20.2 | **Instrumentation route - Non BMS Temp Transmitters** | 0.1d | 2026-09-14 11:00 | 2026-09-14 12:00 |  | 3.55d |
| 475 |  | Instrumentation route - Non BMS Flow Transmitters | 1h | 2026-09-14 11:00 | 2026-09-14 12:00 | 473 | 3.55d |
| 476 | 2.2.20.3 | **Instrumentation route - BMS Flow Transmitters** | 0.35d | 2026-09-14 12:00 | 2026-09-14 17:00 |  | 3.55d |
| 477 |  | 101FT02 Boiler 1 Fuel Gas Flow Transmitter | 1h | 2026-09-14 12:00 | 2026-09-14 13:00 | 475 | 3.45d |
| 478 |  | 101FT03 Boiler 1 Combustion Air Flow Transmitter | 1h | 2026-09-14 13:00 | 2026-09-14 14:00 | 477 | 3.45d |
| 479 |  | 101FT03A Boiler 1 Combustion Air Flow Transmitter A | 1h | 2026-09-14 14:00 | 2026-09-14 15:00 | 478 | 3.45d |
| 480 |  | 101FT04 Boiler 1 Feed Water Flow Transmitter | 1h | 2026-09-14 15:00 | 2026-09-14 16:00 | 479 | 3.45d |
| 481 |  | 101FT05 Boiler 1 Steam Flow Transmitter | 1h | 2026-09-14 16:00 | 2026-09-14 17:00 | 480 | 3.5d |
| 482 | 2.2.20.4 | **Instrumentation route - BMS Level Transmitters** | 0.25d | 2026-09-15 07:00 | 2026-09-15 10:00 |  | 3.6d |
| 483 |  | 101LT01 Boiler 1 Drum Level Transmitter North | 1.5h | 2026-09-15 07:00 | 2026-09-15 08:30 | 481 | 3.6d |
| 484 |  | 101LT02 Boiler 1 Drum Level Transmitter South | 1.5h | 2026-09-15 08:30 | 2026-09-15 10:00 | 483 | 3.65d |
| 485 | 2.2.20.5 | **Instrumentation route - BMS Pressure Transmitters** | 0.55d | 2026-09-15 10:00 | 2026-09-15 16:00 |  | 3.5d |
| 486 |  | 101PT02 Boiler 1 Steam Pressure | 0.5h | 2026-09-15 10:00 | 2026-09-15 10:30 | 484 | 3.65d |
| 487 |  | 101PT04 North Boiler 1 Drum Pressure North | 0.5h | 2026-09-15 10:30 | 2026-09-15 11:00 | 486 | 3.65d |
| 488 |  | 101PT04 South Boiler 1 Drum Pressure South | 0.5h | 2026-09-15 11:00 | 2026-09-15 11:30 | 487 | 3.6d |
| 489 |  | 101PT06 Boiler 1 Windbox Pressure | 0.5h | 2026-09-15 11:30 | 2026-09-15 12:00 | 488 | 3.55d |
| 490 |  | 101PT08 Boiler 1 Furnace Pressure | 0.5h | 2026-09-15 12:00 | 2026-09-15 12:30 | 489 | 3.5d |

| ID | WBS | Task | Duration | Start | Finish | Predecessors | Total float |
| --- | --- | --- | --- | --- | --- | --- | --- |
| 491 |  | 101PT11 Boiler 1 Ignition Gas Burner Pressure | 0.5h | 2026-09-15 12:30 | 2026-09-15 13:00 | 490 | 3.45d |
| 492 |  | 101PT22 Boiler 1 Gas Fuel at Burner Pressure | 0.5h | 2026-09-15 13:00 | 2026-09-15 13:30 | 491 | 3.45d |
| 493 |  | 101PT34 Boiler 1 FD Fan Pressure | 0.5h | 2026-09-15 13:30 | 2026-09-15 14:00 | 492 | 3.45d |
| 494 |  | 101PT36 Boiler 1 Air Heater Gas Inlet Pressure | 0.5h | 2026-09-15 14:00 | 2026-09-15 14:30 | 493 | 3.45d |
| 495 |  | 101PT37 Boiler 1 Air Heater Gas Outlet Pressure | 0.5h | 2026-09-15 14:30 | 2026-09-15 15:00 | 494 | 3.45d |
| 496 |  | 101PT50 Boiler 1 Gas Fuel Pressure | 0.5h | 2026-09-15 15:00 | 2026-09-15 15:30 | 495 | 3.45d |
| 497 |  | 101PT52 Boiler 1 Gas Header Pressure | 0.5h | 2026-09-15 15:30 | 2026-09-15 16:00 | 496 | 3.45d |
| 498 | 2.2.20.6 | **Instrumentation route - Non BMS Pressure Transmitters** | 0.65d | 2026-09-15 16:00 | 2026-09-16 14:00 |  | 3.45d |
| 499 |  | 101FY01G Boiler 1 Fuel Gas Valve I/P | 1h | 2026-09-15 16:00 | 2026-09-15 17:00 | 497 | 3.5d |
| 500 |  | 101FY01GM Boiler 1 Minimum Gas Valve I/P | 1h | 2026-09-16 07:00 | 2026-09-16 08:00 | 499 | 3.6d |
| 501 |  | 101FY03 Boiler 1 FD Fan Inlet Vanes Actuator I/P | 1h | 2026-09-16 08:00 | 2026-09-16 09:00 | 500 | 3.65d |
| 502 |  | 101TY03A Boiler 1 Air Heater Inlet Damper I/P | 1h | 2026-09-16 09:00 | 2026-09-16 10:00 | 501 | 3.65d |
| 503 |  | 101TY03B Boiler 1 Air Heater Bypass Damper I/P | 1h | 2026-09-16 10:00 | 2026-09-16 11:00 | 502 | 3.65d |
| 504 |  | 101FY04A Boiler 1 Feedwater Valve A I/P | 1h | 2026-09-16 11:00 | 2026-09-16 12:00 | 503 | 3.55d |
| 505 |  | 101FY04B Boiler 1 Feedwater Valve B I/P | 1h | 2026-09-16 12:00 | 2026-09-16 13:00 | 504 | 3.45d |
| 506 |  | 101TY18 Boiler 1 Attemperator Valves I/P | 1h | 2026-09-16 13:00 | 2026-09-16 14:00 | 505 | 3.45d |
| 507 |  | BMS & Critical non BMS Instruments Calibrations Complete | 0h | 2026-09-16 14:00 | 2026-09-16 14:00 | 506 | 3.45d |
| 508 | 2.2.21 | **Adhoc Maintenance - Electrical** | 0.8d | 2026-09-13 19:00 | 2026-09-14 17:00 |  | 6.4d |
| 509 |  | REPLACE BOILER 1 EXHAUST GAS ECONOMISER EXIT TEMP (101TI22) TEMPERATURE TRANSMITTER | 2h | 2026-09-14 07:00 | 2026-09-14 09:00 |  | 7.05d |
| 510 |  | REPAIR STANDING ALARM BLR1O2 ANALYSER DIFF HIGH. O2 ANALYSER B HAS FAILED AND IS NOW READING HIGH 5.6 | 2h | 2026-09-14 07:00 | 2026-09-14 09:00 |  | 7.05d |
| 511 |  | Tidy up existing thermocouple wiring | 10h | 2026-09-14 07:00 | 2026-09-14 17:00 |  | 6.4d |
| 512 |  | Erect scaff to access secondary gas analyser rosemount 1B02 | 4h | 2026-09-13 19:00 | 2026-09-13 23:00 |  | 6.55d |
| 513 |  | Remove secondary gas analyser rosemount 1B02 | 4h | 2026-09-14 07:00 | 2026-09-14 11:00 | 512 | 6.85d |
| 514 |  | Adhoc Maintenance - Electrical Complete | 0h | 2026-09-14 17:00 | 2026-09-14 17:00 | 509, 510, 511, 513 | 6.4d |
| 515 | 2.2.22 | **TA1 Generator Prep - Adhoc** | 1.6d | 2026-09-14 07:00 | 2026-09-15 17:00 |  | 5.6d |
| 516 |  | NRG - Inspect TA1 CTs | 10h | 2026-09-14 07:30 | 2026-09-15 09:30 |  | 6.2d |
| 517 |  | Review drawings and asbuild for TA1 generator replacement | 20h | 2026-09-14 07:00 | 2026-09-15 17:00 |  | 5.6d |
| 518 |  | Lagging Removal Complete | 0h | 2026-09-17 21:00 | 2026-09-17 21:00 | 443, 357, 371, 337, 276, 140, 154, 224, 158, 169, 418, 209 | 1.6d |
| 519 |  | Boiler Maintenance Complete | 0h | 2026-09-23 02:00 | 2026-09-23 02:00 | 507, 461, 449, 441, 423, 416, 409, 401, 392, 340, 335, 297, 274, 269, 265, 262, 252, 233, 229, 222, 207, 183, 130, 354, 257, 456 | 0.1d |
| 520 | 2.3 | **Boxup Boiler & Bring Back Online** | 1.95d | 2026-09-19 15:00 | 2026-09-23 11:00 |  | 0.45d |
| 521 |  | Confirm all CSE's removed | 1h | 2026-09-23 02:00 | 2026-09-23 03:00 | 519 | 0.1d |
| 522 |  | Close air path doors | 4h | 2026-09-23 03:00 | 2026-09-23 07:00 | 521 | 0.8d |
| 523 |  | Close gas path doors | 4h | 2026-09-23 07:00 | 2026-09-23 11:00 | 522 | 0.45d |
| 524 |  | Close steam drum doors | 1h | 2026-09-20 08:00 | 2026-09-20 09:00 | 152 | 2.4d |
| 525 |  | Close flash tank door | 1h | 2026-09-19 15:00 | 2026-09-19 16:00 | 323 | 2.4d |
| 526 |  | Close IBO door | 1h | 2026-09-19 15:00 | 2026-09-19 16:00 | 323 | 2.4d |
| 527 |  | All Doors Closed | 0h | 2026-09-23 11:00 | 2026-09-23 11:00 | 526, 525, 523, 524 | 0.45d |
| 528 | 2.4 | **Gas System Boxup** | 0.35d | 2026-09-23 07:00 | 2026-09-23 11:00 |  | 0.2d |
| 529 |  | Remove blank and refit burner 1 gas spool | 0.5h | 2026-09-23 07:00 | 2026-09-23 07:30 | 521 | 0.2d |
| 530 |  | Remove blank and refit burner 2 gas spool | 0.5h | 2026-09-23 07:30 | 2026-09-23 08:00 | 529 | 0.25d |
| 531 |  | Remove blank and refit burner 3 gas spool | 0.5h | 2026-09-23 08:00 | 2026-09-23 08:30 | 530 | 0.25d |
| 532 |  | Remove blank and refit burner 4 gas spool | 0.5h | 2026-09-23 08:30 | 2026-09-23 09:00 | 531 | 0.25d |
| 533 |  | Remove blank and refit burner 5 gas spool | 0.5h | 2026-09-23 09:00 | 2026-09-23 09:30 | 532 | 0.25d |
| 534 |  | Remove blank and refit burner 6 gas spool | 0.5h | 2026-09-23 09:30 | 2026-09-23 10:00 | 533 | 0.25d |
| 535 |  | Swing Main and Pilot Gas System Blanks | 0.5h | 2026-09-23 10:00 | 2026-09-23 10:30 | 534 | 0.25d |
| 536 |  | Deisolate main gas system | 0.5h | 2026-09-23 10:30 | 2026-09-23 11:00 | 535 | 0.25d |
| 537 | 2.5 | **Balance FD Fan** | 0.35d | 2026-09-23 11:00 | 2026-09-23 14:30 |  | 0.1d |
| 538 |  | Amend tagging as required to allow test run and balance of FD fan | 1h | 2026-09-23 11:00 | 2026-09-23 12:00 | 527 | 0.2d |
| 539 |  | Test Run FD fan Prior to boiler start up balancing | 2h | 2026-09-23 12:00 | 2026-09-23 14:00 | 538 | 0.3d |
| 540 |  | Assist with FD fan balance | 2h | 2026-09-23 12:00 | 2026-09-23 14:00 | 538 | 0.15d |
| 541 |  | Balance FD fan | 2h | 2026-09-23 12:00 | 2026-09-23 14:00 | 538 | 0.15d |
| 542 |  | Coat weights after balancing fan | 0.5h | 2026-09-23 14:00 | 2026-09-23 14:30 | 541, 540 | 0.1d |
| 543 |  | FD Fan Balancing Complete | 0h | 2026-09-23 14:30 | 2026-09-23 14:30 | 542, 539 | 0.1d |
| 544 |  | Purge LPG System ready for start up | 2h | 2026-09-23 11:00 | 2026-09-23 13:00 | 536 | 0.25d |
| 545 |  | Detag Boiler ready for FD fan balance, commissioning & start-up | 2h | 2026-09-23 13:00 | 2026-09-23 15:00 | 544, 527, 519, 543 | 0.05d |
| 546 | 2.8 | **Commissioning** | 1.25d | 2026-09-23 11:00 | 2026-09-24 21:00 |  | 0d |
| 547 |  | Calibrate O2 Analyser | 2h | 2026-09-23 11:00 | 2026-09-23 13:00 | 538 | 1.05d |
| 548 |  | Boiler prestart commissioning checks as per CDS | 2h | 2026-09-23 15:00 | 2026-09-23 17:00 | 545 | 0d |
| 549 |  | light up boiler as per CDS | 2h | 2026-09-23 17:00 | 2026-09-23 19:00 | 548 | 0d |
| 550 |  | BMS Commissioning | 6h | 2026-09-24 07:00 | 2026-09-24 13:00 | 549 | 0d |
| 551 |  | Thermal systems assist with BMS comissioning | 6h | 2026-09-24 07:00 | 2026-09-24 13:00 | 549 | 0d |
| 552 |  | Live steam lifts on flash tank safety valve | 4h | 2026-09-24 13:00 | 2026-09-24 17:00 | 551, 550 | 0d |
| 553 |  | Conduct trevi testing on safety valves | 4h | 2026-09-24 17:00 | 2026-09-24 21:00 | 552 | 0d |
| 554 |  | Boiler 2 Major Overhaul Complete | 0h | 2026-09-24 21:00 | 2026-09-24 21:00 | 553, 547 | 0d |

## Version 2 (data date 2026-08-28, saved 2026-08-28, file boiler-progress-native-partial.xml)

Note of the change: Merge pull request #48 from dezrobbo1/feat/partial-progress-and-milestone-evidence

Last finish stays 2026-09-24. Complete tasks 1 → 36.

Changed:

| ID | Task | Start | Finish | Duration | Complete | Total float |
| --- | --- | --- | --- | --- | --- | --- |
| 1 | **Pre-Work** |  |  | 16d → 78.44d | 2% → 67% | 7.2d → 37.31d |
| 2 | **Scaffold** |  | 2026-09-09 13:30 A | 14.2d → 69.75d | 6% → 100% | 9d → none |
| 4 | Scaffold access to Feedwater flow element (1.3) | 2026-08-18 07:30 A | 2026-08-18 11:30 A |  | 0% → 100% | 7.2d → none |
| 5 | Scaffold access to Feedwater isolating valve and NRV, 4-way pipe support (1.4 & 1.5) | 2026-08-18 11:30 A | 2026-08-19 11:30 A |  | 0% → 100% | 7.2d → none |
| 6 | Scaffold access to Steam drum & Steam drum safety valves (2.1 & 2.3.6-10) | 2026-08-19 11:30 A | 2026-08-20 15:30 A |  | 0% → 100% | 7.2d → none |
| 7 | Scaffold access to Attemperator inspection ports (3.2.4) | 2026-08-21 07:30 A | 2026-08-21 13:30 A |  | 0% → 100% | 7.2d → none |
| 8 | Scaffold access to Attemperator Externals (3.3) | 2026-08-21 13:30 A | 2026-08-24 13:30 A |  | 0% → 100% | 7.2d → none |
| 9 | Scaffold access to secondary superheater outlet header (5.1.1-2) | 2026-08-24 13:30 A | 2026-08-25 13:30 A |  | 0% → 100% | 7.2d → none |
| 10 | Scaffold access to Furnace door #4 (8.1.2) | 2026-08-25 13:30 A | 2026-08-25 15:30 A |  | 0% → 100% | 7.2d → none |
| 11 | Scaffold barricade & ladder access to Economsier & RAH (9.1.3 & 13.1.6) | 2026-08-26 07:30 A | 2026-08-26 09:30 A |  | 0% → 100% | 7.2d → none |
| 12 | Scaffold access to HS piping (10.1.6 & 10.2.7-8) | 2026-08-26 09:30 A | 2026-08-28 09:30 A |  | 0% → 100% | 7.2d → none |
| 13 | Scaffold to access Flash tank & Flash tank safety valve (11.1.2 & 11.2.6) | 2026-08-28 09:30 A | 2026-08-28 15:30 A |  | 0% → 100% | 7.2d → none |
| 14 | Scaffold access to FD fan door #3 (12.1.2) | 2026-08-31 07:30 A | 2026-08-31 08:30 A |  | 0% → 100% | 7.2d → none |
| 15 | Scaffold access to FD fan outlet ducting door #14 & #15 (12.1.3) | 2026-08-31 08:30 A | 2026-08-31 12:30 A |  | 0% → 100% | 7.2d → none |
| 16 | Scaffold access to FD fan expansion joint (12.2.7) | 2026-08-31 12:30 A | 2026-09-01 08:30 A |  | 0% → 100% | 7.2d → none |
| 17 | Scaffold access to Rotary air heater door #2 (13.1.4) | 2026-09-01 08:30 A | 2026-09-01 09:30 A |  | 0% → 100% | 7.2d → none |
| 18 | Scaffold handrail at Rotary air heater door #5 (13.1.7) | 2026-09-01 09:30 A | 2026-09-01 10:30 A |  | 0% → 100% | 7.2d → none |
| 19 | Scaffold access to Rotary air heater hot & cold end bearings (13.1.8-9) | 2026-09-01 10:30 A | 2026-09-02 08:30 A |  | 0% → 100% | 7.2d → none |
| 20 | Scaffold to access Rotary air heater for installation of anti-rotation device (13.3.7) | 2026-09-02 08:30 A | 2026-09-02 12:30 A |  | 0% → 100% | 7.2d → none |
| 21 | Scaffold to access Rotary air heater expansion joints x3 (13.4.4) | 2026-09-02 12:30 A | 2026-09-03 12:30 A |  | 0% → 100% | 7.2d → none |
| 22 | Scaffold access to Windbox door #1 (14.1.4) | 2026-09-03 12:30 A | 2026-09-03 13:30 A |  | 0% → 100% | 7.2d → none |
| 23 | Scaffold access to Continuous blowdown valve and enclosure rear wall drain lines (15.2.1) | 2026-09-03 13:30 A | 2026-09-04 11:30 A |  | 0% → 100% | 7.2d → none |
| 24 | Scaffold access to Final drains (15.2.2) | 2026-09-04 11:30 A | 2026-09-07 09:30 A |  | 0% → 100% | 7.2d → none |
| 25 | Scaffold access to HS drains (15.2.3) | 2026-09-07 09:30 A | 2026-09-07 15:30 A |  | 0% → 100% | 7.2d → none |
| 26 | Erect 1m mobile scaffold for misc drains access (15.3.1) | 2026-09-08 07:30 A | 2026-09-08 09:30 A |  | 0% → 100% | 9.2d → none |
| 27 | Scaffold access to Continuous blowdown & downcomer base plate (15.3.2 & 16.1.2) | 2026-09-08 09:30 A | 2026-09-08 11:30 A |  | 0% → 100% | 9.2d → none |
| 28 | Scaffold access to Attemperator return line 4-way pipe support (16.1.1) | 2026-09-08 11:30 A | 2026-09-08 15:30 A |  | 0% → 100% | 9.2d → none |
| 29 | Erect 1m mobile scaffold to access top of MCC panel (18.1) | 2026-09-09 07:30 A | 2026-09-09 09:30 A |  | 0% → 100% | 9.2d → none |
| 30 | Scaffold access to HS header vertical elbow (19.1.4) | 2026-09-09 09:30 A | 2026-09-09 11:30 A |  | 0% → 100% | 9.2d → none |
| 31 | Erect scaffold below steam drum safety valve platform prior to grid mesh removal | 2026-09-09 11:30 A | 2026-09-09 13:30 A |  | 0% → 100% | 9d → none |
| 32 | Pre-Work Scaffold Complete | 2026-09-09 13:30 A | 2026-09-09 13:30 A |  | 0% → 100% | 9d → none |
| 33 | **Online Lagging Removal** | 2026-08-24 07:30 A |  | 12d → 55d | 0% → 36% | 7.2d → 39.69d |
| 34 | Strip lagging on Feedwater station piping and valves (1.2.2) | 2026-08-24 07:30 A | 2026-08-25 11:30 A |  | 0% → 100% | 9.8d → none |
| 35 | Strip lagging on Feedwater flow element nozzles (1.3.3) | 2026-08-25 11:30 A | 2026-08-25 15:30 A |  | 0% → 100% | 9.8d → none |
| 36 | Strip lagging on Feedwater isolating valve and NRV (1.4.3) | 2026-08-26 07:30 A | 2026-08-26 13:30 A |  | 0% → 100% | 9.8d → none |
| 37 | Strip lagging on Feedwater 4-way sliding support (1.5.3) | 2026-08-26 13:30 A | 2026-08-27 09:30 A |  | 0% → 100% | 9.8d → none |
| 38 | Strip lagging on Steam drum doors (2.1.6-7) | 2026-08-27 09:30 A |  |  | 0% → 50% | 9.8d → 1.88d |
| 39 | Strip lagging on Flash tank (11.2) | 2026-08-31 07:30 A |  |  | 0% → 25% | 8.8d → 0.1d |
| 40 | Strip lagging on Blowdown vessel (11.3.1) | 2026-09-02 11:30 A |  |  | 0% → 20% | 8.8d → 11d |
| 46 | **Shutdown TA1** |  |  | 1.6d → 5.5d |  | 8.8d → 45.12d |
| 49 | **Starter Maintenance - Pre-work** |  |  | 0d → 0.44d |  | 7d → 36.81d |
| 57 | 80T Crane to assist with pre-work scaffold lifts | 2026-08-17 07:00 A | 2026-08-21 15:00 A |  | 0% → 100% | 19.25d → none |
| 59 | Remove gridmesh to allow steam drum safety valve removal | 2026-08-20 15:30 A | 2026-08-21 08:30 A |  | 0% → 100% | 19.85d → none |
| 62 | **Boiler Offline** |  |  | 26.6d → 33.25d |  |  |
| 63 | **Shutdown & Isolations** |  |  | 6.4d → 29.75d |  | 0d → 0.38d |
| 64 | **ADMIN ONLY** |  |  | 6.4d → 29.75d |  | 0.8d → 3.5d |
| 67 | **Shutdown Boiler** |  |  | 0.55d → 2.25d |  | 0d → 0.38d |
| 71 | **Electrical Isolations** |  |  | 0.35d → 1.88d |  | 2.05d → 11d |
| 79 | **Gas Purge, Pressure Test & Isolation** |  |  | 0.65d → 2.25d |  | 1.6d → 10.25d |
| 96 | **Boiler Isolations & Hydrostatic Leak Test** |  |  | 0.55d → 2.06d |  | 1.9d → 10.31d |
| 116 | **Maintenance** |  |  | 5.6d → 27.88d |  | 0.8d → 2.62d |
| 117 | **Feedwater System (1)** |  |  | 2.75d → 11d |  | 2.95d → 18.12d |
| 121 | **Feedwater Control Valves** |  |  | 2.75d → 9.5d |  | 2.95d → 18.19d |
| 125 | **Adhoc Maintenance** |  |  | 0.55d → 2.25d |  | 5.1d → 26.56d |
| 126 | **WESTARC - Replace passing LEV04 drain valve** |  |  | 0.55d → 2.25d |  | 5.1d → 26.56d |
| 131 | **Steam Drum (2)** |  |  | 4d → 18.12d |  | 1.6d → 5.12d |
| 132 | **Steam Drum Internal 2.2** |  |  | 1.6d → 4.69d |  | 4d → 21.12d |
| 139 | **Steam Drum External 2.3** |  |  | 2.4d → 14d |  | 0d → 1d |
| 145 | **Steam Drum Safety Valves** |  |  | 0.45d → 0.62d |  | 4.5d → 22.19d |
| 153 | **Attemperator (3)** |  |  | 4.8d → 24.06d |  | 0.9d → 3.62d |
| 155 | **Attemperator Internal - (3.2)** |  |  | 1.6d → 8.44d |  | 1.3d → 9.5d |
| 168 | **Attemperator External - (3.3)** |  |  | 2d → 14.31d |  | 0.9d → 3.62d |
| 175 | **Attemperator Control Valves** |  |  | 1.95d → 6.5d |  | 3.75d → 21.19d |
| 184 | **Penthouse (4)** |  |  | 2.15d → 7.31d |  | 2.75d → 17.19d |
| 185 | **Secondary Superheater Inlet Header (4.2)** |  |  | 1.6d → 4.76d |  | 3.2d → 17.19d |
| 192 | **Economiser Riser Headers (4.3)** |  |  | 0.07d → 1.95d |  | 2.86d → 17.94d |
| 195 | **Upper Waterwall Header (4.4)** |  |  | 0.16d → 0.2d |  | 2.95d → 17.94d |
| 198 | **Saturated Steam Tubes (4.5)** |  |  | 0.16d → 0.2d |  | 2.91d → 17.94d |
| 201 | **Drum and Drum Connections (4.6)** |  |  | 1.35d → 4.25d |  | 2.75d → 17.94d |
| 208 | **Secondary Superheater Outlet Header (5)** |  |  | 3.2d → 18.62d |  | 0d → 0.38d |

| ID | Task | Duration | Total float |
| --- | --- | --- | --- |
| 223 | **Primary Superheater Outlet Header (6)** | 1.6d → 8.06d | 1.6d → 11.25d |
| 230 | **Superheater Enclosure (7)** | 2.45d → 9.12d | 3.25d → 15.56d |
| 231 | **Superheater Tube Bank (7.2)** | 0.25d → 0.31d | 4.05d → 21.56d |
| 234 | **Primary Superheater Outlet Tubes #7, 8 & 9 (7.3)** | 1.05d → 3.38d | 4d → 15.56d |
| 238 | **Secondary Superheater Outlet Tubes #9, 10 (7.4)** | 2.45d → 9.12d | 3.25d → 18.56d |
| 244 | **Superheater Enclosure Wall Tubes (7.5)** | 0.25d → 0.31d | 4.05d → 21.56d |
| 247 | **Screen Wall Tubes (7.6)** | 0.25d → 0.31d | 4.05d → 23.31d |
| 250 | **Superheater Enclosure Headers (7.7)** | 0.85d → 5.06d | 3.25d → 18.56d |
| 253 | **Superheater Safety Valve** | 0.4d → 0.5d | 4.35d → 23.94d |
| 258 | **Furnace (8)** | 1.5d → 3.94d | 4.8d → 26.19d |
| 259 | **Burners (8.2)** | 0.5d → 1.25d | 4d → 23.75d |
| 263 | **Furnace Tubes (8.3)** | 0.2d → 0.25d | 4.2d → 23.75d |
| 266 | **Burner Inspection Ports (8.4)** | 0.35d → 0.5d | 5.5d → 27.19d |
| 270 | **Economiser (9)** | 0.6d → 0.88d | 3.2d → 17.19d |
| 275 | **HS Piping (10)** | 3.25d → 18.12d | 0.8d → 1.12d |
| 282 | **Adhoc Maintenance - HS Piping** | 2.95d → 9.75d | 1.15d → 9.88d |
| 283 | **Replace Faulty HS Flow Element (Adhoc) (10.2)** | 2.45d → 9.12d | 1.25d → 9.88d |
| 292 | **Westarc - Changeout leaking gate valve on BLR1 HS Line** | 0.5d → 0.62d | 1.15d → 11.94d |
| 298 | **Flash Tank & Blowdown Vessel (11)** | 4d → 17d | 2.4d → 13.12d |
| 299 | **Flash Tank (11.2)** | 4d → 16.75d | 2.4d → 13.12d |
| 304 | **Flash Tank Maintenance** | 3.2d → 13.31d | 2.4d → 12.56d |
| 316 | **Blowdown Vessel (11.3)** | 0.75d → 1.62d | 4d → 18d |
| 324 | **FD Fan (12)** | 4d → 13.25d | 1.6d → 4.38d |
| 325 | **FD Fan and Inlet Attenuation Module Inspection** | 3.05d → 9.88d | 0.8d → 1.38d |
| 326 | **FD Fan Maintenance** | 3.05d → 9.88d | 1.85d → 9d |
| 336 | **Replace FD Fan Outlet Expansion Joint** | 2.15d → 8.12d | 0.55d → 1d |
| 341 | **FD Fan Motor** | 4d → 13.25d | 1d → 9.5d |
| 350 | **Adhoc Maintenance - FD Fan** | 0.25d → 0.38d | 5.45d → 27.31d |
| 355 | **RAH & Ducting (13)** | 4d → 16.5d | 0.8d → 1.75d |
| 358 | **Rotary Air Heater Drive Mechanism (13.2)** | 0.4d → 0.56d | 4.5d → 24.12d |
| 361 | **Rotary Air Heater Body & Bearings (13.3)** | 1d → 4.44d | 3.2d → 18.62d |
| 370 | **RAH Expansion Joints (13.4)** | 3.2d → 13.38d | 0d → 1d |
| 376 | **Flue Gas and Air Ducting (13.5)** | 3.2d → 12.5d | 1.7d → 12.19d |
| 379 | **RAH Fire Control System (13.6)** | 0d → 0.12d | 4d → 22.06d |
| 381 | **Stack (13.7)** | 0.8d → 3d | 2.95d → 10.31d |
| 386 | **Adhoc Maintenance** | 1.95d → 6.5d | 3.75d → 21.19d |
| 388 | **Changeout RAH gearbox motor - leaking oil** | 0.55d → 0.75d | 5.15d → 25.19d |
| 393 | **Windbox and Air Registers (14)** | 2.3d → 7.38d | 2.5d → 17.12d |
| 399 | **Adhoc Maintenance - Windbox and Air Registers** | 0.8d → 3d | 2.75d → 15.44d |
| 402 | **Drains & Blowdown System General (15)** | 4d → 13.62d | 1.7d → 14.44d |
| 403 | **Drains & Blowdown System General - Above Ground Level (15.2)** | 4d → 13.62d | 1.7d → 14.44d |
| 410 | **Drains & Blowdown System General - Ground Level (15.3)** | 2.95d → 10.62d | 1.95d → 14.94d |
| 417 | **Integral Piping (16)** | 1.6d → 8.94d | 0d → 0.38d |
| 424 | **Natural Gas System (17)** | 1.55d → 4d | 4.3d → 21.94d |
| 426 | **Gas Valves** | 1.05d → 3.38d | 4.65d → 24.31d |
| 433 | **Gas Pressure Regulator Valve (Axial PRV)** | 1.55d → 4d | 4.15d → 21.94d |
| 442 | **HS Header (19)** | 3.45d → 13d | 0.25d → 0.38d |
| 450 | **PDSHUT289 - Boiler 1 Electrical Maintenance** | 3.85d → 20.81d | 1.6d → 6.5d |
| 457 | **LV Starter Maintenance** | 0.15d → 0.19d | 5.3d → 27.12d |
| 462 | **BMS & Critical non BMS Instruments** | 2.25d → 6.88d | 3.45d → 19.06d |
| 463 | **Instrumentation route - BMS Temp Transmitters** | 0.35d → 0.5d | 3.65d → 19.06d |
| 474 | **Instrumentation route - Non BMS Temp Transmitters** | 0.1d → 0.12d | 3.55d → 20.81d |
| 476 | **Instrumentation route - BMS Flow Transmitters** | 0.35d → 0.62d | 3.55d → 20.81d |
| 482 | **Instrumentation route - BMS Level Transmitters** | 0.25d → 0.38d | 3.6d → 19.06d |
| 485 | **Instrumentation route - BMS Pressure Transmitters** | 0.55d → 0.75d | 3.5d → 20.81d |
| 498 | **Instrumentation route - Non BMS Pressure Transmitters** | 0.65d → 2.75d | 3.45d → 20.81d |
| 508 | **Adhoc Maintenance - Electrical** | 0.8d → 2.75d | 6.4d → 30.5d |
| 515 | **TA1 Generator Prep - Adhoc** | 1.6d → 4.25d | 5.6d → 27d |
| 520 | **Boxup Boiler & Bring Back Online** | 1.95d → 11.5d | 0.45d → 1.75d |
| 528 | **Gas System Boxup** | 0.35d → 0.5d | 0.2d → 0.81d |
| 537 | **Balance FD Fan** | 0.35d → 0.44d | 0.1d → 0.25d |
| 546 | **Commissioning** | 1.25d → 4.25d |  |

## Version 3 (data date 2026-09-05, saved 2026-08-28, file boiler-mark-on-track.xml)

Note of the change: Merge pull request #48 from dezrobbo1/feat/partial-progress-and-milestone-evidence

Last finish stays 2026-09-24. Complete tasks 36 → 40.

Changed:

| ID | Task | Start | Finish | Complete | Total float |
| --- | --- | --- | --- | --- | --- |
| 1 | **Pre-Work** |  |  | 67% → 75% |  |
| 33 | **Online Lagging Removal** |  |  | 36% → 66% |  |
| 38 | Strip lagging on Steam drum doors (2.1.6-7) |  | 2026-08-27 13:30 A | 50% → 100% | 1.88d → none |
| 39 | Strip lagging on Flash tank (11.2) |  | 2026-09-02 11:30 A | 25% → 100% | 0.1d → none |
| 40 | Strip lagging on Blowdown vessel (11.3.1) |  | 2026-09-02 15:30 A | 20% → 100% | 11d → none |
| 41 | Strip lagging on FD fan and ducting (12.1.6) | 2026-09-03 07:30 A | 2026-09-03 15:30 A | 0% → 100% | 11d → none |
